# APPC - Projeto Desenvolvimentos Frente de Loja WEB

Schedule from MS Project, 2021-09-13 to 2022-06-17, status date 2022-01-07, A marks actual dates.
Xseed

## Calendars

- Standard: Mon-Fri 09:00-13:00, 14:00-18:00; Sat-Sun off. Exceptions (off unless hours are given): 2022-05-14 to 2022-05-15 09:00-13:00, 14:00-18:00.

## Resources

| Resource |
| --- |
| BCP |
| GOT |
| GOT / BCP |
| BR |
| ADESS |
| BANR |
| ,XSD |
| BANR/XSD |
| BANR / XSD |
| XSD / BANR |
| XSD |
| XSDXSD / BANR |
| XSD/BANR |
| WAL |
| XSD / WAL |
| XSD / WM-BR |
| XSD/WM-BR |
| WM-BR |
| XSD / BIG |
| XSEED |
| BIG / XSEED |
| SECREL |
| APPC |

## Schedule

| ID | WBS | Task | Duration | Start | Finish | Predecessors | Complete | Remaining | Total slack | Constraint | Resources | Work | Actual work |
| --- | --- | --- | --- | --- | --- | --- | --- | --- | --- | --- | --- | --- | --- |
| 1 | 1 | **APPC - Projeto Desenvolvimento Frente de Loja WEB** | 202d | 2021-09-13 09:00 A | 2022-06-17 18:00 |  | 34% | 132.6d | 0d |  |  | 5640h | 1070.99h |
| 2 | 1.1 | **Levantamento Inicial - Especificação Funcional** | 110d | 2021-09-13 09:00 A | 2022-02-11 18:00 |  | 53% | 51.98d | 92d |  | XSEED; SECREL; APPC | 880h | 192h |
| 3 | 1.1.1 | Entrega Digital | 8d | 2021-09-13 09:00 A | 2021-09-22 18:00 A |  | 100% |  |  |  |  |  |  |
| 4 | 1.1.2 | Frente de Loja - Varejo | 8d | 2021-09-13 09:00 A | 2021-09-22 18:00 A |  | 100% |  |  |  |  |  |  |
| 5 | 1.1.3 | Frente de Loja - Atacado | 8d | 2021-09-13 09:00 A | 2021-09-22 18:00 A |  | 100% |  |  |  |  |  |  |
| 6 | 1.1.4 | Manutenção de Tabelas (Danke) | 8d | 2021-09-13 09:00 A | 2021-09-22 18:00 A |  | 100% |  |  |  |  |  |  |
| 7 | 1.1.5 | Venda Externa (PCConsulta) | 8d | 2021-09-23 09:00 A | 2021-10-04 18:00 A | 3, 4, 5, 6 | 100% |  |  |  |  |  |  |
| 8 | 1.1.6 | Aprovação Varejo/Atacado (Politicas Comerciais, Regras de Aprovação) | 8d | 2021-09-23 09:00 A | 2021-10-04 18:00 A | 3, 4, 5, 6 | 100% |  |  |  |  |  |  |
| 9 | 1.1.7 | Integração | 8d | 2021-09-23 09:00 A | 2021-10-04 18:00 A | 3, 4, 5, 6 | 100% |  |  |  |  |  |  |
| 10 | 1.1.8 | Módulo de Gestão de Acessos | 8d | 2021-09-23 09:00 A | 2021-10-04 18:00 A | 3, 4, 5, 6 | 100% |  |  |  |  |  |  |
| 11 | 1.1.9 | Consulta Pedidos de Venda | 94d | 2021-10-05 09:00 A | 2022-02-11 18:00 | 7, 8, 9, 10 | 9% | 86d | 92d |  |  |  |  |
| 12 | 1.1.10 | Políticas de Frete | 8d | 2021-10-05 09:00 A | 2021-10-14 18:00 A | 7, 8, 9, 10 | 100% |  |  |  |  |  |  |
| 13 | 1.1.11 | Desenvolvimento Política de Prazo/Desconto por Valor | 8d | 2021-10-05 09:00 A | 2021-10-14 18:00 A | 7, 8, 9, 10 | 100% |  |  |  |  |  |  |
| 14 | 1.1.12 | Banco de Dados | 8d | 2021-10-05 09:00 A | 2021-10-14 18:00 A | 7, 8, 9, 10 | 100% |  |  |  |  |  |  |
| 15 | 1.2 | **Desenvolvimento** | 172d | 2021-10-04 08:00 A | 2022-05-27 18:00 |  | 31% | 118.07d | 15d |  |  | 3392h | 878.99h |
| 16 | 1.2.1 | **Desenvolvimento - Entrega Digital** | 21d | 2021-10-04 08:00 A | 2021-11-01 18:00 |  | 94% | 1.33d | 166d |  | XSEED; SECREL | 336h | 314.69h |
| 17 | 1.2.1.1 | **E-001 - Entrega Balcão** | 8d | 2021-10-04 09:00 A | 2021-10-13 18:00 A |  | 100% |  |  |  |  |  |  |
| 18 | 1.2.1.1.1 | TM-001.01 - Tela de Entrega Balcão | 8d | 2021-10-04 09:00 A | 2021-10-13 18:00 A |  | 100% |  |  | start no earlier than 2021-10-04 08:00 |  |  |  |
| 19 | 1.2.1.1.2 | TM-001.01 - Definição de Tabelas | 2d | 2021-10-04 09:00 A | 2021-10-05 18:00 A |  | 100% |  |  | start no earlier than 2021-10-04 08:00 |  |  |  |
| 20 | 1.2.1.1.3 | TM-001.01 - Tela de Acompanhamento de Entregas | 4d | 2021-10-06 09:00 A | 2021-10-11 18:00 A | 19 | 100% |  |  | start no earlier than 2021-10-04 08:00 |  |  |  |
| 21 | 1.2.1.1.4 | Testes Unitários | 2d | 2021-10-12 09:00 A | 2021-10-13 18:00 A | 20 | 100% |  |  |  |  |  |  |
| 22 | 1.2.1.2 | **E-002 - Serviços Entrega Digital** | 5d | 2021-10-04 08:00 A | 2021-10-08 18:00 A |  | 100% |  |  |  |  |  |  |
| 23 | 1.2.1.2.1 | SW-002.01 - Serviço Consuta Entregas | 2d | 2021-10-04 09:00 A | 2021-10-05 18:00 A |  | 100% |  |  | start no earlier than 2021-10-04 08:00 |  |  |  |
| 24 | 1.2.1.2.2 | SW-006.01 - Serviço de Sincronização | 2d | 2021-10-04 09:00 A | 2021-10-05 18:00 A |  | 100% |  |  | start no earlier than 2021-10-04 08:00 |  |  |  |
| 25 | 1.2.1.2.3 | SW-005.01 - Serviço de Finalização | 2d | 2021-10-04 08:00 A | 2021-10-05 18:00 A |  | 100% |  |  | start no earlier than 2021-10-06 08:00 |  |  |  |
| 26 | 1.2.1.2.4 | SW-001.01 - Serviço Criar Entrega | 2d | 2021-10-04 08:00 A | 2021-10-05 18:00 A |  | 100% |  |  | start no earlier than 2021-10-06 08:00 |  |  |  |
| 27 | 1.2.1.2.5 | SW-004.01 - Serviço Desbloquear Entrega | 2d | 2021-10-05 08:00 A | 2021-10-06 18:00 A |  | 100% |  |  | start no earlier than 2021-10-08 08:00 |  |  |  |
| 28 | 1.2.1.2.6 | SW-003.01 - Serviço Bloquear Entrega | 2d | 2021-10-05 08:00 A | 2021-10-06 18:00 A |  | 100% |  |  | start no earlier than 2021-10-08 08:00 |  |  |  |
| 29 | 1.2.1.2.7 | Testes Unitários | 2d | 2021-10-07 08:00 A | 2021-10-08 18:00 A | 23, 24, 25, 26, 27, 28 | 100% |  |  |  |  |  |  |

| ID | WBS | Task | Duration | Start | Finish | Predecessors | Complete | Remaining | Total slack | Free slack | Constraint | Resources | Work |
| --- | --- | --- | --- | --- | --- | --- | --- | --- | --- | --- | --- | --- | --- |
| 30 | 1.2.1.3 | **E-003 - Entrega Delivery** | 8d | 2021-10-11 08:00 A | 2021-10-20 18:00 A |  | 100% |  |  |  |  |  |  |
| 31 | 1.2.1.3.1 | TW-001.01 - Tela de Associação de Entregador | 4d | 2021-10-11 08:00 A | 2021-10-14 18:00 A |  | 100% |  |  |  | start no earlier than 2021-10-11 08:00 |  |  |
| 32 | 1.2.1.3.2 | Testes Unitários | 4d | 2021-10-15 09:00 A | 2021-10-20 18:00 A |  | 100% |  |  |  | start no earlier than 2021-10-15 08:00 |  |  |
| 33 | 1.2.1.4 | **E-004 - Relatórios** | 3d | 2021-10-28 09:00 A | 2021-11-01 18:00 |  | 13% | 2.6d | 166d |  |  |  |  |
| 34 | 1.2.1.4.1 | RW-001.01 - Relatório de Entregas Sem Evidências | 2d | 2021-10-28 09:00 A | 2021-10-29 18:00 |  | 20% | 1.6d | 166d | 0d | start no earlier than 2021-10-28 08:00 |  |  |
| 35 | 1.2.1.4.2 | Testes Unitários | 1d | 2021-11-01 09:00 | 2021-11-01 18:00 | 34 |  |  | 166d |  |  |  |  |
| 36 | 1.2.2 | **Desenvolvimento - Frente de Loja - Varejo - Venda** | 27d | 2021-11-03 09:00 A | 2021-12-09 18:00 |  | 60% | 10.84d | 138d |  |  | XSEED; SECREL | 432h |
| 37 | 1.2.2.1 | **E-005 - Consulta Cliente / Vendedor** | 8d | 2021-11-03 09:00 A | 2021-11-12 18:00 |  | 86% | 1.09d | 157d |  |  |  |  |
| 38 | 1.2.2.1.1 | TW-004.01 - Tela Pedido de Venda | 8d | 2021-11-03 09:00 A | 2021-11-12 18:00 A |  | 100% |  |  |  | start no earlier than 2021-11-03 08:00 |  |  |
| 39 | 1.2.2.1.2 | BD-002.01 - Definição de Tabelas | 2d | 2021-11-03 09:00 A | 2021-11-04 18:00 A |  | 100% |  |  |  | start no earlier than 2021-11-03 08:00 |  |  |
| 40 | 1.2.2.1.3 | RN-001.01 - Recuperação de Pedido | 2d | 2021-11-03 09:00 A | 2021-11-04 18:00 A |  | 100% |  |  |  | start no earlier than 2021-11-03 08:00 |  |  |
| 41 | 1.2.2.1.4 | TW-010.01 - Consulta Cliente | 4d | 2021-11-04 09:00 A | 2021-11-09 18:00 A |  | 100% |  |  |  | start no earlier than 2021-11-04 08:00 |  |  |
| 42 | 1.2.2.1.5 | TW-011.01 - Identificar Vendedor | 4d | 2021-11-04 09:00 A | 2021-11-09 18:00 |  | 50% | 2d | 160d |  | start no earlier than 2021-11-04 08:00 |  |  |
| 43 | 1.2.2.1.6 | Testes Unitários | 2d | 2021-11-09 09:00 A | 2021-11-10 18:00 |  | 50% | 1d | 159d |  | start no earlier than 2021-11-09 08:00 |  |  |
| 44 | 1.2.2.2 | **E-006 - Busca de Produtos / Semelhantes / Resumo do Pedido** | 5d | 2021-11-11 09:00 A | 2021-11-17 18:00 |  | 73% | 1.33d | 154d |  |  |  |  |
| 45 | 1.2.2.2.1 | CW-001.01 - Consulta Produtos | 2d | 2021-11-11 09:00 A | 2021-11-12 18:00 |  | 90% | 0.2d | 157d |  | start no earlier than 2021-11-11 08:00 |  |  |
| 46 | 1.2.2.2.2 | CW-002.01 - Consulta Semelhantes | 2d | 2021-11-11 09:00 A | 2021-11-12 18:00 A |  | 100% |  |  |  | start no earlier than 2021-11-11 08:00 |  |  |
| 47 | 1.2.2.2.3 | TW-008.01 - Exibição de Imagens | 2d | 2021-11-11 09:00 A | 2021-11-12 18:00 |  | 50% | 1d | 157d |  | start no earlier than 2021-11-11 08:00 |  |  |
| 48 | 1.2.2.2.4 | CW-003.01 - Resumo do Pedido | 2d | 2021-11-16 09:00 A | 2021-11-17 18:00 A |  | 100% |  |  |  | start no earlier than 2021-11-16 08:00 |  |  |
| 49 | 1.2.2.2.5 | CW-004.01 - Consulta Estoque Outras Lojas | 2d | 2021-11-16 09:00 A | 2021-11-17 18:00 |  | 50% | 1d | 154d |  | start no earlier than 2021-11-16 08:00 |  |  |
| 50 | 1.2.2.2.6 | Testes Unitários | 2d | 2021-11-16 09:00 A | 2021-11-17 18:00 |  | 50% | 1d | 154d |  | start no earlier than 2021-11-16 08:00 |  |  |
| 51 | 1.2.2.3 | **E-007 - Ficha Financeira do Cliente / Venda de Tintas** | 4d | 2021-11-18 09:00 A | 2021-11-23 18:00 |  | 33% | 2.7d | 150d |  |  |  |  |
| 52 | 1.2.2.3.1 | CW-005.01 - Ficha Financeira Cliente | 2d | 2021-11-18 09:00 A | 2021-11-19 18:00 A |  | 100% |  |  |  | start no earlier than 2021-11-18 08:00 |  |  |
| 53 | 1.2.2.3.2 | TW-007.01 - Tela Cadastro Rápido de Cliente | 2d | 2021-11-18 09:00 | 2021-11-19 18:00 |  |  |  | 152d |  | start no earlier than 2021-11-18 08:00 |  |  |
| 54 | 1.2.2.3.3 | RN-002.01 - Venda de tintas (Insumos) | 2d | 2021-11-22 09:00 | 2021-11-23 18:00 |  |  |  | 150d |  | start no earlier than 2021-11-20 08:00 |  |  |
| 55 | 1.2.2.3.4 | Testes Unitários | 2d | 2021-11-22 09:00 A | 2021-11-23 18:00 |  | 30% | 1.4d | 150d |  | start no earlier than 2021-11-22 08:00 |  |  |

| ID | WBS | Task | Duration | Start | Finish | Complete | Remaining | Total slack | Constraint | Resources | Work | Actual work |
| --- | --- | --- | --- | --- | --- | --- | --- | --- | --- | --- | --- | --- |
| 56 | 1.2.2.4 | **E-008 - Fechamento do Pedido** | 6d | 2021-11-24 09:00 A | 2021-12-01 18:00 | 50% | 3d | 144d |  |  |  |  |
| 57 | 1.2.2.4.1 | TW-015.01 - Tela Fechamento de Pedido (Tab) | 2d | 2021-11-24 09:00 A | 2021-11-25 18:00 | 80% | 0.4d | 148d | start no earlier than 2021-11-24 08:00 |  |  |  |
| 58 | 1.2.2.4.2 | TW-016.01 - Transportadora | 2d | 2021-11-24 09:00 A | 2021-11-25 18:00 | 20% | 1.6d | 148d | start no earlier than 2021-11-24 08:00 |  |  |  |
| 59 | 1.2.2.4.3 | CW-006.01 - Formas de Pagamento | 2d | 2021-11-26 09:00 A | 2021-11-29 18:00 A | 100% |  |  | start no earlier than 2021-11-26 08:00 |  |  |  |
| 60 | 1.2.2.4.4 | CW-007.01 - Condições de Pagamento | 2d | 2021-11-26 09:00 A | 2021-11-29 18:00 | 50% | 1d | 146d | start no earlier than 2021-11-26 08:00 |  |  |  |
| 61 | 1.2.2.4.5 | RN-003.01 - Log do Pedido (Auditoria) | 2d | 2021-11-30 09:00 | 2021-12-01 18:00 |  |  | 144d | start no earlier than 2021-11-30 08:00 |  |  |  |
| 62 | 1.2.2.4.6 | Testes Unitários | 2d | 2021-11-30 09:00 A | 2021-12-01 18:00 | 50% | 1d | 144d | start no earlier than 2021-11-30 08:00 |  |  |  |
| 63 | 1.2.2.5 | **E-010 - Integrações** | 4d | 2021-12-06 09:00 A | 2021-12-09 18:00 | 9% | 3.65d | 138d |  |  |  |  |
| 64 | 1.2.2.5.1 | IN-001.01 - Integrações - WMS | 2d | 2021-12-06 09:00 | 2021-12-07 18:00 |  |  | 140d | start no earlier than 2021-12-06 08:00 |  |  |  |
| 65 | 1.2.2.5.2 | IN-001.02 - Integrações - SysPDV | 2d | 2021-12-06 09:00 | 2021-12-07 18:00 |  |  | 140d | start no earlier than 2021-12-06 08:00 |  |  |  |
| 66 | 1.2.2.5.3 | IN-001.04 - Integrações - SAP | 2d | 2021-12-08 09:00 A | 2021-12-09 18:00 | 25% | 1.5d | 138d | start no earlier than 2021-12-08 08:00 |  |  |  |
| 67 | 1.2.2.5.4 | Testes Unitários | 2d | 2021-12-08 09:00 A | 2021-12-09 18:00 | 10% | 1.8d | 138d | start no earlier than 2021-12-08 08:00 |  |  |  |
| 68 | 1.2.3 | **Desenvolvimento Frente de Loja - Varejo - Orçamento** | 23d | 2021-12-10 09:00 A | 2022-01-11 18:00 | 35% | 14.91d | 115d |  | XSEED; SECREL | 368h | 129.43h |
| 69 | 1.2.3.1 | **E-011 - Consulta Cliente / Vendedor** | 3d | 2021-12-10 09:00 A | 2021-12-14 18:00 | 89% | 0.32d | 135d |  |  |  |  |
| 70 | 1.2.3.1.1 | TW-004.02 - Tela Orçamento | 2d | 2021-12-10 09:00 A | 2021-12-13 18:00 A | 100% |  |  | start no earlier than 2021-12-10 08:00 |  |  |  |
| 71 | 1.2.3.1.2 | BD-003.01 - Definição de Tabelas | 2d | 2021-12-10 09:00 A | 2021-12-13 18:00 A | 100% |  |  | start no earlier than 2021-12-10 08:00 |  |  |  |
| 72 | 1.2.3.1.3 | RN-001.02 - Recuperação de Pedido | 1d | 2021-12-14 09:00 A | 2021-12-14 18:00 A | 100% |  |  | start no earlier than 2021-12-14 08:00 |  |  |  |
| 73 | 1.2.3.1.4 | TW-010.01 - Consulta Cliente | 0.5d | 2021-12-14 09:00 A | 2021-12-14 13:00 A | 100% |  |  | start no earlier than 2021-12-14 08:00 |  |  |  |
| 74 | 1.2.3.1.5 | TW-011.01 - Identificar Vendedor | 0.5d | 2021-12-14 09:00 A | 2021-12-14 13:00 | 50% | 0.25d | 135.5d | start no earlier than 2021-12-14 08:00 |  |  |  |
| 75 | 1.2.3.1.6 | Testes Unitários | 1d | 2021-12-14 09:00 A | 2021-12-14 18:00 | 50% | 0.5d | 135d | start no earlier than 2021-12-14 08:00 |  |  |  |
| 76 | 1.2.3.2 | **E-012 - Busca de Produtos / Semelhantes / Resumo do Orçamento** | 2d | 2021-12-15 09:00 A | 2021-12-16 18:00 | 68% | 0.65d | 133d |  |  |  |  |
| 77 | 1.2.3.2.1 | CW-001.01 - Consulta Produtos | 0.5d | 2021-12-15 09:00 A | 2021-12-15 13:00 | 90% | 0.05d | 134.5d | start no earlier than 2021-12-15 08:00 |  |  |  |
| 78 | 1.2.3.2.2 | CW-003.01 - Consulta Semelhantes | 0.5d | 2021-12-15 09:00 A | 2021-12-15 13:00 A | 100% |  |  | start no earlier than 2021-12-15 08:00 |  |  |  |
| 79 | 1.2.3.2.3 | TW-008.01 - Exibição de Imagens | 0.5d | 2021-12-15 09:00 A | 2021-12-15 13:00 | 50% | 0.25d | 134.5d | start no earlier than 2021-12-15 08:00 |  |  |  |
| 80 | 1.2.3.2.4 | CW-003.01 - Resumo do Pedido | 0.5d | 2021-12-15 09:00 A | 2021-12-15 13:00 A | 100% |  |  | start no earlier than 2021-12-15 08:00 |  |  |  |
| 81 | 1.2.3.2.5 | CW-004.01 - Consulta Estoque Outras Lojas | 1d | 2021-12-16 09:00 A | 2021-12-16 18:00 | 50% | 0.5d | 133d | start no earlier than 2021-12-16 08:00 |  |  |  |
| 82 | 1.2.3.2.6 | Testes Unitários | 1d | 2021-12-16 09:00 A | 2021-12-16 18:00 | 50% | 0.5d | 133d | start no earlier than 2021-12-16 08:00 |  |  |  |

| ID | WBS | Task | Duration | Start | Finish | Predecessors | Complete | Remaining | Total slack | Free slack | Constraint | Resources | Work | Actual work |
| --- | --- | --- | --- | --- | --- | --- | --- | --- | --- | --- | --- | --- | --- | --- |
| 83 | 1.2.3.3 | **E-013 - Ficha Financeira do Cliente / Venda de Tintas** | 2d | 2021-12-17 09:00 A | 2021-12-20 18:00 |  | 32% | 1.36d | 131d |  |  |  |  |  |
| 84 | 1.2.3.3.1 | CW-005.01 - Ficha Financeira Cliente | 0.5d | 2021-12-17 09:00 A | 2021-12-17 13:00 A |  | 100% |  |  |  | start no earlier than 2021-12-17 08:00 |  |  |  |
| 85 | 1.2.3.3.2 | TW-007.01 - Tela Cadastro Rápido de Cliente | 0.5d | 2021-12-17 09:00 | 2021-12-17 13:00 |  |  |  | 132.5d |  | start no earlier than 2021-12-17 08:00 |  |  |  |
| 86 | 1.2.3.3.3 | RN-002.01 - Venda de Tintas (Insumos) | 0.5d | 2021-12-20 09:00 | 2021-12-20 13:00 |  |  |  | 131.5d |  | start no earlier than 2021-12-20 08:00 |  |  |  |
| 87 | 1.2.3.3.4 | Testes Unitários | 1d | 2021-12-20 09:00 A | 2021-12-20 18:00 |  | 30% | 0.7d | 131d |  | start no earlier than 2021-12-20 08:00 |  |  |  |
| 88 | 1.2.3.4 | **E-014 - Fechamento do Orçamento** | 3d | 2021-12-20 09:00 A | 2021-12-22 18:00 |  | 4% | 2.87d | 129d |  |  |  |  |  |
| 89 | 1.2.3.4.1 | TW-015.01 - Tela Fechamento de Pedido (Tab) | 0.5d | 2021-12-20 09:00 A | 2021-12-20 13:00 |  | 30% | 0.35d | 131.5d |  | start no earlier than 2021-12-20 08:00 |  |  |  |
| 90 | 1.2.3.4.2 | TW-016.01 - Transportadora | 0.5d | 2021-12-20 09:00 | 2021-12-20 13:00 |  |  |  | 131.5d |  | start no earlier than 2021-12-20 08:00 |  |  |  |
| 91 | 1.2.3.4.3 | CW-006.01 - Formas de Pagamento | 0.5d | 2021-12-21 09:00 | 2021-12-21 13:00 |  |  |  | 130.5d |  | start no earlier than 2021-12-21 08:00 |  |  |  |
| 92 | 1.2.3.4.4 | CW-007.01 -Condições de Pagamento | 0.5d | 2021-12-21 09:00 | 2021-12-21 13:00 |  |  |  | 130.5d |  | start no earlier than 2021-12-21 08:00 |  |  |  |
| 93 | 1.2.3.4.5 | RN-003.02 - Log do Pedido (Auditoria) | 0.5d | 2021-12-22 09:00 | 2021-12-22 13:00 |  |  |  | 129.5d |  | start no earlier than 2021-12-22 08:00 |  |  |  |
| 94 | 1.2.3.4.6 | Testes Unitários | 1d | 2021-12-22 09:00 | 2021-12-22 18:00 |  |  |  | 129d |  | start no earlier than 2021-12-22 08:00 |  |  |  |
| 95 | 1.2.3.5 | **E-016 - Integrações** | 2d | 2022-01-03 09:00 A | 2022-01-04 18:00 |  | 5% | 1.9d | 120d |  |  |  |  |  |
| 96 | 1.2.3.5.1 | IN-001.05 - Integrações - SAP | 1d | 2022-01-03 09:00 A | 2022-01-03 18:00 |  | 10% | 0.9d | 120d | 0d | start no earlier than 2022-01-03 08:00 |  |  |  |
| 97 | 1.2.3.5.2 | Testes Unitários | 1d | 2022-01-04 09:00 | 2022-01-04 18:00 | 96 |  |  | 120d |  |  |  |  |  |
| 98 | 1.2.3.6 | **E-017 - Validade do Orçamento / Conversão em Pedido** | 5d | 2022-01-05 09:00 A | 2022-01-11 18:00 |  | 2% | 4.9d | 115d |  |  |  |  |  |
| 99 | 1.2.3.6.1 | RN-010.01 - Validade do Orçamento | 2d | 2022-01-05 09:00 A | 2022-01-06 18:00 |  | 10% | 1.8d | 118d |  | start no earlier than 2022-01-05 08:00 |  |  |  |
| 100 | 1.2.3.6.2 | TW-006.01 - Tela Abrir Orçamento | 2d | 2022-01-05 09:00 | 2022-01-06 18:00 |  |  |  | 118d |  | start no earlier than 2022-01-05 08:00 |  |  |  |
| 101 | 1.2.3.6.3 | RN-011.01 - Converter Orçamento em Pedido | 2d | 2022-01-07 09:00 | 2022-01-10 18:00 |  |  |  | 116d |  | start no earlier than 2022-01-07 08:00 |  |  |  |
| 102 | 1.2.3.6.4 | TW-009.01 - Tela Envio de E-mail com Orçamento | 2d | 2022-01-07 09:00 | 2022-01-10 18:00 |  |  |  | 116d |  | start no earlier than 2022-01-07 08:00 |  |  |  |
| 103 | 1.2.3.6.5 | Testes Unitários | 2d | 2022-01-10 09:00 | 2022-01-11 18:00 |  |  |  | 115d |  | start no earlier than 2022-01-10 08:00 |  |  |  |
| 104 | 1.2.4 | **Desenvolvimento Frente de Loja - Varejo - Transferência** | 12d | 2022-01-12 09:00 A | 2022-01-27 18:00 |  | 56% | 5.3d | 103d |  |  | XSEED; SECREL | 192h | 107.15h |
| 105 | 1.2.4.1 | **E-018 - Consulta Cliente / Vendedor** | 5d | 2022-01-12 09:00 A | 2022-01-18 18:00 |  | 83% | 0.86d | 110d |  |  |  |  |  |
| 106 | 1.2.4.1.1 | TW-004.03 - Tela Transferência | 2d | 2022-01-12 09:00 A | 2022-01-13 18:00 A |  | 100% |  |  |  | start no earlier than 2022-01-12 08:00 |  |  |  |
| 107 | 1.2.4.1.2 | BD-003.01 - Definição de Tabelas | 2d | 2022-01-12 09:00 A | 2022-01-13 18:00 A |  | 100% |  |  |  | start no earlier than 2022-01-12 08:00 |  |  |  |
| 108 | 1.2.4.1.3 | RN-001.03 - Recuperação do Pedido | 1d | 2022-01-14 09:00 A | 2022-01-14 18:00 A |  | 100% |  |  |  | start no earlier than 2022-01-14 08:00 |  |  |  |
| 109 | 1.2.4.1.4 | TW-010.02 - Consulta Cliente (clientes são apenas as filiais) | 0.5d | 2022-01-17 09:00 A | 2022-01-17 13:00 |  | 50% | 0.25d | 111.5d |  | start no earlier than 2022-01-17 08:00 |  |  |  |
| 110 | 1.2.4.1.5 | TW-011.01 - Identificar Vendedor | 0.5d | 2022-01-17 09:00 A | 2022-01-17 13:00 |  | 50% | 0.25d | 111.5d |  | start no earlier than 2022-01-17 08:00 |  |  |  |
| 111 | 1.2.4.1.6 | Testes Unitários | 1d | 2022-01-18 09:00 A | 2022-01-18 18:00 |  | 30% | 0.7d | 110d |  | start no earlier than 2022-01-18 08:00 |  |  |  |

| ID | WBS | Task | Duration | Start | Finish | Complete | Remaining | Total slack | Constraint | Resources | Work | Actual work |
| --- | --- | --- | --- | --- | --- | --- | --- | --- | --- | --- | --- | --- |
| 112 | 1.2.4.2 | **E-019 - Busca de Produtos / Semelhantes / Resumo da Transferência** | 4d | 2022-01-19 09:00 A | 2022-01-24 18:00 | 70% | 1.2d | 106d |  |  |  |  |
| 113 | 1.2.4.2.1 | CW-001.01 - Consulta Produtos | 0.5d | 2022-01-19 09:00 A | 2022-01-19 13:00 | 90% | 0.05d | 109.5d | start no earlier than 2022-01-19 08:00 |  |  |  |
| 114 | 1.2.4.2.2 | CW-002.01 - Consulta Semelhantes | 0.5d | 2022-01-19 09:00 A | 2022-01-19 13:00 A | 100% |  |  | start no earlier than 2022-01-19 08:00 |  |  |  |
| 115 | 1.2.4.2.3 | TW-008.01 - Exibição de Imagens | 0.5d | 2022-01-20 09:00 A | 2022-01-20 13:00 | 50% | 0.25d | 108.5d | start no earlier than 2022-01-20 08:00 |  |  |  |
| 116 | 1.2.4.2.4 | CW-003.01 - Resumo do Pedido | 0.5d | 2022-01-20 09:00 A | 2022-01-20 13:00 A | 100% |  |  | start no earlier than 2022-01-20 08:00 |  |  |  |
| 117 | 1.2.4.2.5 | CW-004.01 - Consulta Estoque Outras Lojas | 0.5d | 2022-01-21 09:00 A | 2022-01-21 13:00 | 50% | 0.25d | 107.5d | start no earlier than 2022-01-21 08:00 |  |  |  |
| 118 | 1.2.4.2.6 | Testes Unitários | 1d | 2022-01-24 09:00 A | 2022-01-24 18:00 | 50% | 0.5d | 106d | start no earlier than 2022-01-24 08:00 |  |  |  |
| 119 | 1.2.4.3 | **E-020 - Fechamento do Pedido / Integrações** | 4d | 2022-01-24 09:00 A | 2022-01-27 18:00 | 8% | 3.68d | 103d |  |  |  |  |
| 120 | 1.2.4.3.1 | TW-015.02 - Tela Fechamento de Pedido (Tab) | 1d | 2022-01-24 09:00 A | 2022-01-24 18:00 | 30% | 0.7d | 106d | start no earlier than 2022-01-24 08:00 |  |  |  |
| 121 | 1.2.4.3.2 | TW-005.01 - Tela de Autorizações | 0.5d | 2022-01-25 09:00 | 2022-01-25 13:00 |  |  | 105.5d | start no earlier than 2022-01-25 08:00 |  |  |  |
| 122 | 1.2.4.3.3 | RN-003.03 - Log do Pedido (Auditoria) | 0.5d | 2022-01-25 09:00 | 2022-01-25 13:00 |  |  | 105.5d | start no earlier than 2022-01-25 08:00 |  |  |  |
| 123 | 1.2.4.3.4 | IN-001.06 - Integrações - WMS | 1d | 2022-01-26 09:00 | 2022-01-26 18:00 |  |  | 104d | start no earlier than 2022-01-26 08:00 |  |  |  |
| 124 | 1.2.4.3.5 | IN-001.07 - Integrações - SAP | 1d | 2022-01-26 09:00 A | 2022-01-26 18:00 | 10% | 0.9d | 104d | start no earlier than 2022-01-26 08:00 |  |  |  |
| 125 | 1.2.4.3.6 | Testes Unitários | 1d | 2022-01-27 09:00 | 2022-01-27 18:00 |  |  | 103d | start no earlier than 2022-01-27 08:00 |  |  |  |
| 126 | 1.2.5 | **Desenvolvimento Frente de Loja - Varejo - Devolução/Garantia** | 6d | 2022-01-28 09:00 A | 2022-02-04 18:00 | 68% | 1.92d | 97d |  | XSEED; SECREL | 96h | 65.28h |
| 127 | 1.2.5.1 | **E-021 - Devolução / Garantia** | 6d | 2022-01-28 09:00 A | 2022-02-04 18:00 | 68% | 1.92d | 97d |  |  |  |  |
| 128 | 1.2.5.1.1 | TW-034.01 - Tela Devolução | 1d | 2022-01-28 09:00 A | 2022-01-28 18:00 | 80% | 0.2d | 102d | start no earlier than 2022-01-28 08:00 |  |  |  |
| 129 | 1.2.5.1.2 | BD-004.01 - Definição de Tabelas | 1d | 2022-01-28 09:00 A | 2022-01-28 18:00 A | 100% |  |  | start no earlier than 2022-01-28 08:00 |  |  |  |
| 130 | 1.2.5.1.3 | IN-001.14 - Integrações - SAP | 1d | 2022-01-31 09:00 A | 2022-01-31 18:00 | 70% | 0.3d | 101d | start no earlier than 2022-01-29 08:00 |  |  |  |
| 131 | 1.2.5.1.4 | RN-013.01 - Consulta de Cupom Fiscal | 1d | 2022-02-01 09:00 A | 2022-02-01 18:00 A | 100% |  |  | start no earlier than 2022-02-01 08:00 |  |  |  |
| 132 | 1.2.5.1.5 | TW-010.01 - Consulta Cliente | 0.5d | 2022-02-02 09:00 A | 2022-02-02 13:00 | 20% | 0.4d | 99.5d | start no earlier than 2022-02-02 08:00 |  |  |  |
| 133 | 1.2.5.1.6 | CW-008.01 - Seleção de Itens | 0.5d | 2022-02-02 09:00 A | 2022-02-02 13:00 A | 100% |  |  | start no earlier than 2022-02-02 08:00 |  |  |  |
| 134 | 1.2.5.1.7 | CW-009.01 - Informação de Motivo | 0.5d | 2022-02-03 09:00 A | 2022-02-03 13:00 A | 100% |  |  | start no earlier than 2022-02-03 08:00 |  |  |  |
| 135 | 1.2.5.1.8 | Testes Unitários | 2d | 2022-02-03 09:00 A | 2022-02-04 18:00 | 25% | 1.5d | 97d | start no earlier than 2022-02-03 08:00 |  |  |  |

| ID | WBS | Task | Duration | Start | Finish | Predecessors | Total slack | Free slack | Constraint | Resources | Work |
| --- | --- | --- | --- | --- | --- | --- | --- | --- | --- | --- | --- |
| 136 | 1.2.6 | **Desenvolvimento Frente de Loja - Atacado - Venda** | 12d | 2022-02-08 09:00 | 2022-02-23 18:00 |  | 84d |  |  | XSEED; SECREL | 192h |
| 137 | 1.2.6.1 | **E-022 - Consulta Cliente / Vendedor** | 9d | 2022-02-10 09:00 | 2022-02-22 18:00 |  | 85d |  |  |  |  |
| 138 | 1.2.6.1.1 | TW-004.04 - Tela Pedido de Venda | 2d | 2022-02-10 09:00 | 2022-02-11 18:00 |  | 92d |  | start no earlier than 2022-02-10 08:00 |  |  |
| 139 | 1.2.6.1.2 | BD-005.01 - Definição de Tabelas | 2d | 2022-02-14 09:00 | 2022-02-15 18:00 |  | 90d |  | start no earlier than 2022-02-14 08:00 |  |  |
| 140 | 1.2.6.1.3 | RN-002.01 - Recuperação do Pedido | 2d | 2022-02-15 09:00 | 2022-02-16 18:00 |  | 85d | 0d | start no earlier than 2022-02-15 08:00 |  |  |
| 141 | 1.2.6.1.4 | TW-010.01 - Consulta Cliente | 2d | 2022-02-17 09:00 | 2022-02-18 18:00 | 140 | 85d | 0d |  |  |  |
| 142 | 1.2.6.1.5 | TW-012.01 - Identificar Vendedor - Login | 2d | 2022-02-21 09:00 | 2022-02-22 18:00 | 141 | 85d |  |  |  |  |
| 143 | 1.2.6.1.6 | Testes Unitários | 2d | 2022-02-15 09:00 | 2022-02-16 18:00 |  | 89d |  | start no earlier than 2022-02-15 08:00 |  |  |
| 144 | 1.2.6.2 | **E-023 - Busca de Produtos / Semelhantes / Resumo do Pedido** | 3d | 2022-02-08 09:00 | 2022-02-10 18:00 |  | 93d |  |  |  |  |
| 145 | 1.2.6.2.1 | CW-001.02 - Consulta Produtos | 1d | 2022-02-08 09:00 | 2022-02-08 18:00 |  | 95d |  | start no earlier than 2022-02-08 08:00 |  |  |
| 146 | 1.2.6.2.2 | CW-002.01 - Consulta Semelhantes | 0.5d | 2022-02-09 09:00 | 2022-02-09 13:00 |  | 94.5d |  | start no earlier than 2022-02-09 08:00 |  |  |
| 147 | 1.2.6.2.3 | TW-008.01 - Exibição de Imagens | 0.5d | 2022-02-09 09:00 | 2022-02-09 13:00 |  | 94.5d |  | start no earlier than 2022-02-09 08:00 |  |  |
| 148 | 1.2.6.2.4 | CW-003.01 - Resumo do Pedido | 0.5d | 2022-02-09 09:00 | 2022-02-09 13:00 |  | 94.5d |  | start no earlier than 2022-02-09 08:00 |  |  |
| 149 | 1.2.6.2.5 | CW-004.01 - Consulta Estoque Outras Lojas | 0.5d | 2022-02-09 09:00 | 2022-02-09 13:00 |  | 94.5d |  | start no earlier than 2022-02-09 08:00 |  |  |
| 150 | 1.2.6.2.6 | Testes Unitários | 1d | 2022-02-10 09:00 | 2022-02-10 18:00 |  | 93d |  | start no earlier than 2022-02-10 08:00 |  |  |
| 151 | 1.2.6.3 | **E-024 - Ficha Financeira do Cliente / Fechamento** | 4d | 2022-02-10 09:00 | 2022-02-15 18:00 |  | 90d |  |  |  |  |
| 152 | 1.2.6.3.1 | CW-005.01 - Ficha Financeira Cliente | 0.5d | 2022-02-10 09:00 | 2022-02-10 13:00 |  | 93.5d |  | start no earlier than 2022-02-10 08:00 |  |  |
| 153 | 1.2.6.3.2 | TW-015.03 - Fechamento de Pedido | 1d | 2022-02-10 09:00 | 2022-02-10 18:00 |  | 93d |  | start no earlier than 2022-02-10 08:00 |  |  |
| 154 | 1.2.6.3.3 | TW-016.01 - Transportadora | 0.5d | 2022-02-11 09:00 | 2022-02-11 13:00 |  | 92.5d |  | start no earlier than 2022-02-11 08:00 |  |  |
| 155 | 1.2.6.3.4 | CW-006.02 - Formas de Pagamento | 0.5d | 2022-02-11 09:00 | 2022-02-11 13:00 |  | 92.5d |  | start no earlier than 2022-02-11 08:00 |  |  |
| 156 | 1.2.6.3.5 | CW-007.02 - Condições de Pagamento | 0.5d | 2022-02-14 09:00 | 2022-02-14 13:00 |  | 91.5d |  | start no earlier than 2022-02-14 08:00 |  |  |
| 157 | 1.2.6.3.6 | RN-004.01 - Log do Pedido (Auditoria) | 1d | 2022-02-14 09:00 | 2022-02-14 18:00 |  | 91d |  | start no earlier than 2022-02-14 08:00 |  |  |
| 158 | 1.2.6.3.7 | Testes Unitários | 1d | 2022-02-15 09:00 | 2022-02-15 18:00 |  | 90d |  | start no earlier than 2022-02-15 08:00 |  |  |
| 159 | 1.2.6.4 | **E-025 - Politica de Descontos, de Prazos e de Frete / Aprovação** | 6d | 2022-02-15 09:00 | 2022-02-22 18:00 |  | 85d |  |  |  |  |
| 160 | 1.2.6.4.1 | RN-007.01 - Politica de Descontos - Cliente Cadastrado | 2d | 2022-02-15 09:00 | 2022-02-16 18:00 |  | 89d |  | start no earlier than 2022-02-15 08:00 |  |  |
| 161 | 1.2.6.4.2 | RN-008.01 - Politica de Descontos - Item | 2d | 2022-02-15 09:00 | 2022-02-16 18:00 |  | 89d |  | start no earlier than 2022-02-15 08:00 |  |  |
| 162 | 1.2.6.4.3 | RN-009.01 - Politica de Prazos - Item | 2d | 2022-02-17 09:00 | 2022-02-18 18:00 |  | 87d |  | start no earlier than 2022-02-17 08:00 |  |  |
| 163 | 1.2.6.4.4 | RN-006.02 - Política de Frete - Delivery | 1d | 2022-02-17 09:00 | 2022-02-17 18:00 |  | 88d |  | start no earlier than 2022-02-17 08:00 |  |  |
| 164 | 1.2.6.4.5 | RN-012.01 - Submeter à Aprovação | 2d | 2022-02-18 09:00 | 2022-02-21 18:00 |  | 86d |  | start no earlier than 2022-02-18 08:00 |  |  |
| 165 | 1.2.6.4.6 | Testes Unitários | 2d | 2022-02-21 09:00 | 2022-02-22 18:00 |  | 85d |  | start no earlier than 2022-02-21 08:00 |  |  |

| ID | WBS | Task | Duration | Start | Finish | Total slack | Constraint | Resources | Work |
| --- | --- | --- | --- | --- | --- | --- | --- | --- | --- |
| 166 | 1.2.6.5 | **E-026 - Integrações** | 2d | 2022-02-22 09:00 | 2022-02-23 18:00 | 84d |  |  |  |
| 167 | 1.2.6.5.1 | IN-001.08 - Integrações - WMS | 1d | 2022-02-22 09:00 | 2022-02-22 18:00 | 85d | start no earlier than 2022-02-22 08:00 |  |  |
| 168 | 1.2.6.5.2 | IN-001.09 - Integrações - SAP | 1d | 2022-02-22 09:00 | 2022-02-22 18:00 | 85d | start no earlier than 2022-02-22 08:00 |  |  |
| 169 | 1.2.6.5.3 | Testes Unitários | 1d | 2022-02-23 09:00 | 2022-02-23 18:00 | 84d | start no earlier than 2022-02-23 08:00 |  |  |
| 170 | 1.2.7 | **Denvolvimento Frente de Loja - Atacado - Orçamento** | 15d | 2022-02-24 09:00 | 2022-03-16 18:00 | 69d |  | XSEED; SECREL | 240h |
| 171 | 1.2.7.1 | **E-027 - Consulta Cliente / Ficha Financeira do Cliente / Vendedor** | 8d | 2022-02-24 09:00 | 2022-03-07 18:00 | 76d |  |  |  |
| 172 | 1.2.7.1.1 | TW-004.08 - Tela Orçamento | 2d | 2022-02-24 09:00 | 2022-02-25 18:00 | 82d | start no earlier than 2022-02-24 08:00 |  |  |
| 173 | 1.2.7.1.2 | BD-006.01 - Definição de Tabelas | 2d | 2022-02-24 09:00 | 2022-02-25 18:00 | 82d | start no earlier than 2022-02-24 08:00 |  |  |
| 174 | 1.2.7.1.3 | RN-002.02 - Recuperação do Pedido | 1d | 2022-03-03 09:00 | 2022-03-03 18:00 | 78d | start no earlier than 2022-03-03 08:00 |  |  |
| 175 | 1.2.7.1.4 | TW-010.01 - Consulta Cliente | 0.5d | 2022-03-04 09:00 | 2022-03-04 13:00 | 77.5d | start no earlier than 2022-03-04 08:00 |  |  |
| 176 | 1.2.7.1.5 | CW-005.01 - Ficha Financeira Cliente | 0.5d | 2022-03-04 09:00 | 2022-03-04 13:00 | 77.5d | start no earlier than 2022-03-04 08:00 |  |  |
| 177 | 1.2.7.1.6 | TW-012.01 - Identificar Vendedor - Login | 0.5d | 2022-03-07 09:00 | 2022-03-07 13:00 | 76.5d | start no earlier than 2022-03-07 08:00 |  |  |
| 178 | 1.2.7.1.7 | Testes Unitários | 1d | 2022-03-07 09:00 | 2022-03-07 18:00 | 76d | start no earlier than 2022-03-07 08:00 |  |  |
| 179 | 1.2.7.2 | **E-028 - Busca de Produtos / Semelhantes / Resumo do Pedido** | 3d | 2022-03-08 09:00 | 2022-03-10 18:00 | 73d |  |  |  |
| 180 | 1.2.7.2.1 | CW-001.02 - Consulta Produtos | 0.5d | 2022-03-08 09:00 | 2022-03-08 13:00 | 75.5d | start no earlier than 2022-03-08 08:00 |  |  |
| 181 | 1.2.7.2.2 | CW-002.01 - Consulta Semelhantes | 0.5d | 2022-03-08 09:00 | 2022-03-08 13:00 | 75.5d | start no earlier than 2022-03-08 08:00 |  |  |
| 182 | 1.2.7.2.3 | TW-008.01 - Exibição de Imagens | 0.5d | 2022-03-09 09:00 | 2022-03-09 13:00 | 74.5d | start no earlier than 2022-03-09 08:00 |  |  |
| 183 | 1.2.7.2.4 | CW-003.01 - Resumo do Pedido | 0.5d | 2022-03-09 09:00 | 2022-03-09 13:00 | 74.5d | start no earlier than 2022-03-09 08:00 |  |  |
| 184 | 1.2.7.2.5 | CW-004.01 - Consulta Estoque Outras Lojas | 0.5d | 2022-03-10 09:00 | 2022-03-10 13:00 | 73.5d | start no earlier than 2022-03-10 08:00 |  |  |
| 185 | 1.2.7.2.6 | Testes Unitários | 1d | 2022-03-10 09:00 | 2022-03-10 18:00 | 73d | start no earlier than 2022-03-10 08:00 |  |  |
| 186 | 1.2.7.3 | **E-029 - Fechamento** | 3d | 2022-03-11 09:00 | 2022-03-15 18:00 | 70d |  |  |  |
| 187 | 1.2.7.3.1 | TW-015.03 - Tela Fechamento de Pedido (Tab) | 1d | 2022-03-11 09:00 | 2022-03-11 18:00 | 72d | start no earlier than 2022-03-11 08:00 |  |  |
| 188 | 1.2.7.3.2 | TW-016.01 - Transportadora | 0.5d | 2022-03-11 09:00 | 2022-03-11 13:00 | 72.5d | start no earlier than 2022-03-11 08:00 |  |  |
| 189 | 1.2.7.3.3 | CW-006.02 - Formas de Pagamento | 0.5d | 2022-03-14 09:00 | 2022-03-14 13:00 | 71.5d | start no earlier than 2022-03-14 08:00 |  |  |
| 190 | 1.2.7.3.4 | CW-007.02 - Condições de Pagamento | 0.5d | 2022-03-14 09:00 | 2022-03-14 13:00 | 71.5d | start no earlier than 2022-03-14 08:00 |  |  |
| 191 | 1.2.7.3.5 | RN-004.01 - Log do Pedido (Auditoria) | 0.5d | 2022-03-14 09:00 | 2022-03-14 13:00 | 71.5d | start no earlier than 2022-03-14 08:00 |  |  |
| 192 | 1.2.7.3.6 | Testes Unitários | 1d | 2022-03-15 09:00 | 2022-03-15 18:00 | 70d | start no earlier than 2022-03-15 08:00 |  |  |

| ID | WBS | Task | Duration | Start | Finish | Total slack | Constraint | Resources | Work |
| --- | --- | --- | --- | --- | --- | --- | --- | --- | --- |
| 193 | 1.2.7.4 | **E-030 - Politica de Descontos, de Prazos e de Frete** | 1d | 2022-03-15 09:00 | 2022-03-15 18:00 | 70d |  |  |  |
| 194 | 1.2.7.4.1 | RN-007.01 - Politica de Descontos - Cliente Cadastrado | 0.5d | 2022-03-15 09:00 | 2022-03-15 13:00 | 70.5d | start no earlier than 2022-03-15 08:00 |  |  |
| 195 | 1.2.7.4.2 | RN-008.01 - Politica de Descontos - Item | 0.5d | 2022-03-15 09:00 | 2022-03-15 13:00 | 70.5d | start no earlier than 2022-03-15 08:00 |  |  |
| 196 | 1.2.7.4.3 | RN-009.01 - Politica de Prazos - Item | 0.5d | 2022-03-15 09:00 | 2022-03-15 13:00 | 70.5d | start no earlier than 2022-03-15 08:00 |  |  |
| 197 | 1.2.7.4.4 | RN-006.02 - Política de Frete - Delivery | 0.5d | 2022-03-15 09:00 | 2022-03-15 13:00 | 70.5d | start no earlier than 2022-03-15 08:00 |  |  |
| 198 | 1.2.7.4.5 | Testes Unitários | 1d | 2022-03-15 09:00 | 2022-03-15 18:00 | 70d | start no earlier than 2022-03-15 08:00 |  |  |
| 199 | 1.2.7.5 | **E-031 - Integrações** | 0.5d | 2022-03-16 09:00 | 2022-03-16 13:00 | 69.5d |  |  |  |
| 200 | 1.2.7.5.1 | IN-001.10 - Integrações - WMS | 0.5d | 2022-03-16 09:00 | 2022-03-16 13:00 | 69.5d | start no earlier than 2022-03-16 08:00 |  |  |
| 201 | 1.2.7.5.2 | IN-001.11 - Integrações - SAP | 0.5d | 2022-03-16 09:00 | 2022-03-16 13:00 | 69.5d | start no earlier than 2022-03-16 08:00 |  |  |
| 202 | 1.2.7.5.3 | Testes Unitários | 0.5d | 2022-03-16 09:00 | 2022-03-16 13:00 | 69.5d | start no earlier than 2022-03-16 08:00 |  |  |
| 203 | 1.2.7.6 | **E-032 - Validade do Orçamento / Conversão em Pedido** | 1d | 2022-03-16 09:00 | 2022-03-16 18:00 | 69d |  |  |  |
| 204 | 1.2.7.6.1 | RN-010.02 - Validade do Orçamento | 0.5d | 2022-03-16 09:00 | 2022-03-16 13:00 | 69.5d | start no earlier than 2022-03-16 08:00 |  |  |
| 205 | 1.2.7.6.2 | TW-006.02 - Tela Abrir Orçamento | 0.5d | 2022-03-16 09:00 | 2022-03-16 13:00 | 69.5d | start no earlier than 2022-03-16 08:00 |  |  |
| 206 | 1.2.7.6.3 | TW-009.01 - Tela de Envio de E-mail com Orçamento | 0.5d | 2022-03-16 09:00 | 2022-03-16 13:00 | 69.5d | start no earlier than 2022-03-16 08:00 |  |  |
| 207 | 1.2.7.6.4 | RN-011.02 - Converter Orçamento em Pedido | 0.5d | 2022-03-16 09:00 | 2022-03-16 13:00 | 69.5d | start no earlier than 2022-03-16 08:00 |  |  |
| 208 | 1.2.7.6.5 | Testes Unitários | 1d | 2022-03-16 09:00 | 2022-03-16 18:00 | 69d | start no earlier than 2022-03-16 08:00 |  |  |
| 209 | 1.2.8 | **Denvolvimento Frente de Loja - Atacado - Transferência** | 4d | 2022-03-17 09:00 | 2022-03-22 18:00 | 65d |  | XSEED; SECREL | 64h |
| 210 | 1.2.8.1 | **E-033 - Consulta Cliente / Vendedor** | 2d | 2022-03-17 09:00 | 2022-03-18 18:00 | 67d |  |  |  |
| 211 | 1.2.8.1.1 | TW-004.07 - Tela Transferência | 2d | 2022-03-17 09:00 | 2022-03-18 18:00 | 67d | start no earlier than 2022-03-17 08:00 |  |  |
| 212 | 1.2.8.1.2 | BD-007.01 - Definição de Tabelas | 2d | 2022-03-17 09:00 | 2022-03-18 18:00 | 67d | start no earlier than 2022-03-17 08:00 |  |  |
| 213 | 1.2.8.1.3 | RN-002.03 - Recuperação do Pedido | 1d | 2022-03-17 09:00 | 2022-03-17 18:00 | 68d | start no earlier than 2022-03-17 08:00 |  |  |
| 214 | 1.2.8.1.4 | TW-010.02 - Consulta Cliente (clientes são apenas as filiais) | 0.5d | 2022-03-17 09:00 | 2022-03-17 13:00 | 68.5d | start no earlier than 2022-03-17 08:00 |  |  |
| 215 | 1.2.8.1.5 | TW-012.01 - Identificar Vendedor - Login | 0.5d | 2022-03-17 09:00 | 2022-03-17 13:00 | 68.5d | start no earlier than 2022-03-17 08:00 |  |  |
| 216 | 1.2.8.1.6 | Testes Unitários | 1d | 2022-03-17 09:00 | 2022-03-17 18:00 | 68d | start no earlier than 2022-03-17 08:00 |  |  |

| ID | WBS | Task | Duration | Start | Finish | Total slack | Constraint | Resources | Work |
| --- | --- | --- | --- | --- | --- | --- | --- | --- | --- |
| 217 | 1.2.8.2 | **E-034 - Busca de Produtos / Semelhantes / Estoque / Resumo da Transferência** | 2d | 2022-03-18 09:00 | 2022-03-21 18:00 | 66d |  |  |  |
| 218 | 1.2.8.2.1 | CW-001.02 - Consulta Produtos | 0.5d | 2022-03-18 09:00 | 2022-03-18 13:00 | 67.5d | start no earlier than 2022-03-18 08:00 |  |  |
| 219 | 1.2.8.2.2 | CW-002.01 - Consulta Semelhantes | 0.5d | 2022-03-18 09:00 | 2022-03-18 13:00 | 67.5d | start no earlier than 2022-03-18 08:00 |  |  |
| 220 | 1.2.8.2.3 | TW-008.01 - Exibição de Imagens | 0.5d | 2022-03-18 09:00 | 2022-03-18 13:00 | 67.5d | start no earlier than 2022-03-18 08:00 |  |  |
| 221 | 1.2.8.2.4 | CW-003.01 - Resumo do Pedido | 0.5d | 2022-03-21 09:00 | 2022-03-21 13:00 | 66.5d | start no earlier than 2022-03-21 08:00 |  |  |
| 222 | 1.2.8.2.5 | CW-004.01 - Consulta Estoque Outras Lojas | 0.5d | 2022-03-21 09:00 | 2022-03-21 13:00 | 66.5d | start no earlier than 2022-03-21 08:00 |  |  |
| 223 | 1.2.8.2.6 | Testes Unitários | 1d | 2022-03-21 09:00 | 2022-03-21 18:00 | 66d | start no earlier than 2022-03-21 08:00 |  |  |
| 224 | 1.2.8.3 | **E-035 - Fechamento do Pedido / Ultima Transferencia / Integrações** | 2d | 2022-03-21 09:00 | 2022-03-22 18:00 | 65d |  |  |  |
| 225 | 1.2.8.3.1 | TW-015.04 - Fechamento de Pedido | 0.5d | 2022-03-21 09:00 | 2022-03-21 13:00 | 66.5d | start no earlier than 2022-03-21 08:00 |  |  |
| 226 | 1.2.8.3.2 | CW-010.01 - Consulta Ultima Transferência | 1d | 2022-03-21 09:00 | 2022-03-21 18:00 | 66d | start no earlier than 2022-03-21 08:00 |  |  |
| 227 | 1.2.8.3.3 | RN-014.01 - Controle de Transferências Diária | 1d | 2022-03-22 09:00 | 2022-03-22 18:00 | 65d | start no earlier than 2022-03-22 08:00 |  |  |
| 228 | 1.2.8.3.4 | IN-001.12 - Integrações - WMS | 1d | 2022-03-22 09:00 | 2022-03-22 18:00 | 65d | start no earlier than 2022-03-22 08:00 |  |  |
| 229 | 1.2.8.3.5 | IN-001.13 - Integrações - SAP | 1d | 2022-03-22 09:00 | 2022-03-22 18:00 | 65d | start no earlier than 2022-03-22 08:00 |  |  |
| 230 | 1.2.8.3.6 | TW-005.01 - Tela de Autorização (Supervisor) | 0.5d | 2022-03-22 09:00 | 2022-03-22 13:00 | 65.5d | start no earlier than 2022-03-22 08:00 |  |  |
| 231 | 1.2.8.3.7 | RN-004.03 - Log do Pedido (Auditoria) | 0.5d | 2022-03-22 09:00 | 2022-03-22 13:00 | 65.5d | start no earlier than 2022-03-22 08:00 |  |  |
| 232 | 1.2.8.3.8 | Testes Unitários | 1d | 2022-03-22 09:00 | 2022-03-22 18:00 | 65d | start no earlier than 2022-03-22 08:00 |  |  |
| 233 | 1.2.9 | **Desenvolvimento - PCConsulta - Pedido Externo - Venda** | 5d | 2022-03-23 09:00 | 2022-03-29 18:00 | 60d |  | XSEED; SECREL | 80h |
| 234 | 1.2.9.1 | **E-036 - Consulta Cliente / Vendedor** | 1d | 2022-03-23 09:00 | 2022-03-23 18:00 | 64d |  |  |  |
| 235 | 1.2.9.1.1 | TW-004.08 - Tela Pedido de Venda | 1d | 2022-03-23 09:00 | 2022-03-23 18:00 | 64d | start no earlier than 2022-03-23 08:00 |  |  |
| 236 | 1.2.9.1.2 | BD-008.01 - Definição de Tabelas | 1d | 2022-03-23 09:00 | 2022-03-23 18:00 | 64d | start no earlier than 2022-03-23 08:00 |  |  |
| 237 | 1.2.9.1.3 | RN-002.01 - Recuperação do Pedido | 0.5d | 2022-03-23 09:00 | 2022-03-23 13:00 | 64.5d | start no earlier than 2022-03-23 08:00 |  |  |
| 238 | 1.2.9.1.4 | TW-010.01 - Consulta Cliente | 0.5d | 2022-03-23 09:00 | 2022-03-23 13:00 | 64.5d | start no earlier than 2022-03-23 08:00 |  |  |
| 239 | 1.2.9.1.5 | TW-012.01 - Identificar Vendedor/Cliente - Login | 0.5d | 2022-03-23 09:00 | 2022-03-23 13:00 | 64.5d | start no earlier than 2022-03-23 08:00 |  |  |
| 240 | 1.2.9.1.6 | Testes Unitários | 1d | 2022-03-23 09:00 | 2022-03-23 18:00 | 64d | start no earlier than 2022-03-23 08:00 |  |  |

| ID | WBS | Task | Duration | Start | Finish | Total slack | Constraint |
| --- | --- | --- | --- | --- | --- | --- | --- |
| 241 | 1.2.9.2 | **E-037 - Busca de Produtos / Semelhantes / Estoque / Resumo do Pedido** | 2d | 2022-03-23 09:00 | 2022-03-24 18:00 | 63d |  |
| 242 | 1.2.9.2.1 | CW-001.02 - Consulta Produtos | 0.5d | 2022-03-23 09:00 | 2022-03-23 13:00 | 64.5d | start no earlier than 2022-03-23 08:00 |
| 243 | 1.2.9.2.2 | CW-002.01 - Consulta Semelhantes | 0.5d | 2022-03-23 09:00 | 2022-03-23 13:00 | 64.5d | start no earlier than 2022-03-23 08:00 |
| 244 | 1.2.9.2.3 | TW-008.01 - Exibição de Imagens | 0.5d | 2022-03-23 09:00 | 2022-03-23 13:00 | 64.5d | start no earlier than 2022-03-23 08:00 |
| 245 | 1.2.9.2.4 | CW-003.01 - Resumo do Pedido | 0.5d | 2022-03-24 09:00 | 2022-03-24 13:00 | 63.5d | start no earlier than 2022-03-24 08:00 |
| 246 | 1.2.9.2.5 | CW-004.01 - Consulta Estoque Outras Lojas | 0.5d | 2022-03-24 09:00 | 2022-03-24 13:00 | 63.5d | start no earlier than 2022-03-24 08:00 |
| 247 | 1.2.9.2.6 | Testes Unitários | 1d | 2022-03-24 09:00 | 2022-03-24 18:00 | 63d | start no earlier than 2022-03-24 08:00 |
| 248 | 1.2.9.3 | **E-038 - Ficha Financeira do Cliente / Fechamento** | 2d | 2022-03-24 09:00 | 2022-03-25 18:00 | 62d |  |
| 249 | 1.2.9.3.1 | CW-005.01 - Ficha Financeira Cliente | 0.5d | 2022-03-24 09:00 | 2022-03-24 13:00 | 63.5d | start no earlier than 2022-03-24 08:00 |
| 250 | 1.2.9.3.2 | TW-015.03 - Fechamento de Pedido | 0.5d | 2022-03-24 09:00 | 2022-03-24 13:00 | 63.5d | start no earlier than 2022-03-24 08:00 |
| 251 | 1.2.9.3.3 | TW-016.01 - Transportadora | 0.5d | 2022-03-24 09:00 | 2022-03-24 13:00 | 63.5d | start no earlier than 2022-03-24 08:00 |
| 252 | 1.2.9.3.4 | CW-006.02 - Formas de Pagamento | 0.5d | 2022-03-24 09:00 | 2022-03-24 13:00 | 63.5d | start no earlier than 2022-03-24 08:00 |
| 253 | 1.2.9.3.5 | CW-007.02 - Condições de Pagamento | 0.5d | 2022-03-25 09:00 | 2022-03-25 13:00 | 62.5d | start no earlier than 2022-03-25 08:00 |
| 254 | 1.2.9.3.6 | RN-004.01 - Log do Pedido (Auditoria) | 0.5d | 2022-03-25 09:00 | 2022-03-25 13:00 | 62.5d | start no earlier than 2022-03-25 08:00 |
| 255 | 1.2.9.3.7 | Testes Unitários | 1d | 2022-03-25 09:00 | 2022-03-25 18:00 | 62d | start no earlier than 2022-03-25 08:00 |
| 256 | 1.2.9.4 | **E-039 - Politica de Descontos, de Prazos e de Frete / Aprovação** | 2d | 2022-03-25 09:00 | 2022-03-28 18:00 | 61d |  |
| 257 | 1.2.9.4.1 | RN-007.01 - Politica de Descontos - Cliente Cadastrado | 0.5d | 2022-03-25 09:00 | 2022-03-25 13:00 | 62.5d | start no earlier than 2022-03-25 08:00 |
| 258 | 1.2.9.4.2 | RN-008.01 - Politica de Descontos - Item | 0.5d | 2022-03-25 09:00 | 2022-03-25 13:00 | 62.5d | start no earlier than 2022-03-25 08:00 |
| 259 | 1.2.9.4.3 | RN-009.01 - Politica de Prazos - Item | 0.5d | 2022-03-28 09:00 | 2022-03-28 13:00 | 61.5d | start no earlier than 2022-03-28 08:00 |
| 260 | 1.2.9.4.4 | RN-006.02 - Política de Frete - Delivery | 0.5d | 2022-03-28 09:00 | 2022-03-28 13:00 | 61.5d | start no earlier than 2022-03-28 08:00 |
| 261 | 1.2.9.4.5 | RN-012.01 - Submeter à Aprovação | 0.5d | 2022-03-28 09:00 | 2022-03-28 13:00 | 61.5d | start no earlier than 2022-03-28 08:00 |
| 262 | 1.2.9.4.6 | Testes Unitários | 1d | 2022-03-28 09:00 | 2022-03-28 18:00 | 61d | start no earlier than 2022-03-28 08:00 |
| 263 | 1.2.9.5 | **E-040 - Integrações** | 2d | 2022-03-28 09:00 | 2022-03-29 18:00 | 60d |  |
| 264 | 1.2.9.5.1 | TW-017.01 - Tela Solicitações Pedidos de Venda (Lista de Pedidos Aguardando Alteração) (Fechamento Vendedor) | 2d | 2022-03-28 09:00 | 2022-03-29 18:00 | 60d | start no earlier than 2022-03-28 08:00 |
| 265 | 1.2.9.5.2 | IN-001.08 - Integrações - WMS | 0.5d | 2022-03-29 09:00 | 2022-03-29 13:00 | 60.5d | start no earlier than 2022-03-29 08:00 |
| 266 | 1.2.9.5.3 | IN-001.09 - Integrações - SAP | 0.5d | 2022-03-29 09:00 | 2022-03-29 13:00 | 60.5d | start no earlier than 2022-03-29 08:00 |
| 267 | 1.2.9.5.4 | Testes Unitários | 1d | 2022-03-29 09:00 | 2022-03-29 18:00 | 60d | start no earlier than 2022-03-29 08:00 |

| ID | WBS | Task | Duration | Start | Finish | Total slack | Constraint | Resources | Work |
| --- | --- | --- | --- | --- | --- | --- | --- | --- | --- |
| 268 | 1.2.10 | **Desenvolvimento PCConsulta - Pedido Externo - Orçamento** | 7d | 2022-03-30 09:00 | 2022-04-07 18:00 | 53d |  | XSEED; SECREL | 112h |
| 269 | 1.2.10.1 | **E-041 - Consulta Cliente / Ficha Financeira do Cliente / Vendedor** | 2d | 2022-03-30 09:00 | 2022-03-31 18:00 | 58d |  |  |  |
| 270 | 1.2.10.1.1 | TW-004.09 - Tela Orçamento | 1d | 2022-03-30 09:00 | 2022-03-30 18:00 | 59d | start no earlier than 2022-03-30 08:00 |  |  |
| 271 | 1.2.10.1.2 | BD-009.01 - Definição de Tabelas | 1d | 2022-03-30 09:00 | 2022-03-30 18:00 | 59d | start no earlier than 2022-03-30 08:00 |  |  |
| 272 | 1.2.10.1.3 | RN-002.02 - Recuperação do Pedido | 0.5d | 2022-03-30 09:00 | 2022-03-30 13:00 | 59.5d | start no earlier than 2022-03-30 08:00 |  |  |
| 273 | 1.2.10.1.4 | TW-010.01 - Consulta Cliente | 0.5d | 2022-03-30 09:00 | 2022-03-30 13:00 | 59.5d | start no earlier than 2022-03-30 08:00 |  |  |
| 274 | 1.2.10.1.5 | CW-005.01 - Ficha Financeira Cliente | 0.5d | 2022-03-30 09:00 | 2022-03-30 13:00 | 59.5d | start no earlier than 2022-03-30 08:00 |  |  |
| 275 | 1.2.10.1.6 | TW-012.01 - Identificar Vendedor/Cliente - Login | 0.5d | 2022-03-31 09:00 | 2022-03-31 13:00 | 58.5d | start no earlier than 2022-03-31 08:00 |  |  |
| 276 | 1.2.10.1.7 | Testes Unitários | 1d | 2022-03-31 09:00 | 2022-03-31 18:00 | 58d | start no earlier than 2022-03-31 08:00 |  |  |
| 277 | 1.2.10.2 | **E-042 - Busca de Produtos / Semelhantes / Estoque / Resumo do Pedido** | 2d | 2022-03-31 09:00 | 2022-04-01 18:00 | 57d |  |  |  |
| 278 | 1.2.10.2.1 | CW-001.02 - Consulta Produtos | 0.5d | 2022-03-31 09:00 | 2022-03-31 13:00 | 58.5d | start no earlier than 2022-03-31 08:00 |  |  |
| 279 | 1.2.10.2.2 | CW-002.01 - Consulta Semelhantes | 0.5d | 2022-03-31 09:00 | 2022-03-31 13:00 | 58.5d | start no earlier than 2022-03-31 08:00 |  |  |
| 280 | 1.2.10.2.3 | TW-008.01 - Exibição de Imagens | 0.5d | 2022-03-31 09:00 | 2022-03-31 13:00 | 58.5d | start no earlier than 2022-03-31 08:00 |  |  |
| 281 | 1.2.10.2.4 | CW-003.01 - Resumo do Pedido | 0.5d | 2022-04-01 09:00 | 2022-04-01 13:00 | 57.5d | start no earlier than 2022-04-01 08:00 |  |  |
| 282 | 1.2.10.2.5 | CW-004.01 - Consulta Estoque Outras Lojas | 0.5d | 2022-04-01 09:00 | 2022-04-01 13:00 | 57.5d | start no earlier than 2022-04-01 08:00 |  |  |
| 283 | 1.2.10.2.6 | Testes Unitários | 1d | 2022-04-01 09:00 | 2022-04-01 18:00 | 57d | start no earlier than 2022-04-01 08:00 |  |  |
| 284 | 1.2.10.3 | **E-043 - Fechamento** | 1d | 2022-04-04 09:00 | 2022-04-04 18:00 | 56d |  |  |  |
| 285 | 1.2.10.3.1 | TW-015.03 - Fechamento de Pedido | 0.5d | 2022-04-04 09:00 | 2022-04-04 13:00 | 56.5d | start no earlier than 2022-04-04 08:00 |  |  |
| 286 | 1.2.10.3.2 | TW-016.01 - Transportadora | 0.5d | 2022-04-04 09:00 | 2022-04-04 13:00 | 56.5d | start no earlier than 2022-04-04 08:00 |  |  |
| 287 | 1.2.10.3.3 | CW-006.02 - Formas de Pagamento | 0.5d | 2022-04-04 09:00 | 2022-04-04 13:00 | 56.5d | start no earlier than 2022-04-04 08:00 |  |  |
| 288 | 1.2.10.3.4 | CW-007.02 - Condições de Pagamento | 0.5d | 2022-04-04 09:00 | 2022-04-04 13:00 | 56.5d | start no earlier than 2022-04-04 08:00 |  |  |
| 289 | 1.2.10.3.5 | RN-004.02 - Log do Pedido (Auditoria) | 0.5d | 2022-04-04 09:00 | 2022-04-04 13:00 | 56.5d | start no earlier than 2022-04-04 08:00 |  |  |
| 290 | 1.2.10.3.6 | Testes Unitários | 1d | 2022-04-04 09:00 | 2022-04-04 18:00 | 56d | start no earlier than 2022-04-04 08:00 |  |  |
| 291 | 1.2.10.4 | **E-044 - Politica de Descontos, de Prazos e de Frete / Envio de e-mail** | 1d | 2022-04-05 09:00 | 2022-04-05 18:00 | 55d |  |  |  |
| 292 | 1.2.10.4.1 | TW-009.01 - Envio de E-mail com Orçamento | 0.5d | 2022-04-05 09:00 | 2022-04-05 13:00 | 55.5d | start no earlier than 2022-04-05 08:00 |  |  |
| 293 | 1.2.10.4.2 | RN-007.01 - Politica de Descontos - Cliente Cadastrado | 0.5d | 2022-04-05 09:00 | 2022-04-05 13:00 | 55.5d | start no earlier than 2022-04-05 08:00 |  |  |
| 294 | 1.2.10.4.3 | RN-006.02 - Política de Frete - Delivery | 0.5d | 2022-04-05 09:00 | 2022-04-05 13:00 | 55.5d | start no earlier than 2022-04-05 08:00 |  |  |
| 295 | 1.2.10.4.4 | Testes Unitários | 1d | 2022-04-05 09:00 | 2022-04-05 18:00 | 55d | start no earlier than 2022-04-05 08:00 |  |  |

| ID | WBS | Task | Duration | Start | Finish | Total slack | Constraint | Resources | Work |
| --- | --- | --- | --- | --- | --- | --- | --- | --- | --- |
| 296 | 1.2.10.5 | **E-045 - Integrações** | 1d | 2022-04-05 09:00 | 2022-04-05 18:00 | 55d |  |  |  |
| 297 | 1.2.10.5.1 | IN-001.10 - Integrações - WMS | 0.5d | 2022-04-05 09:00 | 2022-04-05 13:00 | 55.5d | start no earlier than 2022-04-05 08:00 |  |  |
| 298 | 1.2.10.5.2 | IN-001.11 - Integrações - SAP | 0.5d | 2022-04-05 09:00 | 2022-04-05 13:00 | 55.5d | start no earlier than 2022-04-05 08:00 |  |  |
| 299 | 1.2.10.5.3 | Testes Unitários | 1d | 2022-04-05 09:00 | 2022-04-05 18:00 | 55d | start no earlier than 2022-04-05 08:00 |  |  |
| 300 | 1.2.10.6 | **E-046 - Validade do Orçamento / Conversão em Pedido** | 2d | 2022-04-06 09:00 | 2022-04-07 18:00 | 53d |  |  |  |
| 301 | 1.2.10.6.1 | RN-010.02 - Validade do Orçamento | 0.5d | 2022-04-06 09:00 | 2022-04-06 13:00 | 54.5d | start no earlier than 2022-04-06 08:00 |  |  |
| 302 | 1.2.10.6.2 | TW-006.02 - Tela Abrir Orçamento | 0.5d | 2022-04-06 09:00 | 2022-04-06 13:00 | 54.5d | start no earlier than 2022-04-06 08:00 |  |  |
| 303 | 1.2.10.6.3 | TW-009.01 - Tela de Envio de E-mail com Orçamento | 0.5d | 2022-04-07 09:00 | 2022-04-07 13:00 | 53.5d | start no earlier than 2022-04-07 08:00 |  |  |
| 304 | 1.2.10.6.4 | RN-001.02 - Converter Orçamento em Pedido | 0.5d | 2022-04-07 09:00 | 2022-04-07 13:00 | 53.5d | start no earlier than 2022-04-07 08:00 |  |  |
| 305 | 1.2.10.6.5 | Testes Unitários | 1d | 2022-04-07 09:00 | 2022-04-07 18:00 | 53d | start no earlier than 2022-04-07 08:00 |  |  |
| 306 | 1.2.11 | **Desenvolvimento DANKE - Módulo de Manutenção de Tabelas** | 18d | 2022-04-07 09:00 | 2022-05-02 18:00 | 36d |  | XSEED; SECREL | 288h |
| 307 | 1.2.11.1 | **E-047 - Controle de Acesso** | 1d | 2022-04-07 09:00 | 2022-04-07 18:00 | 53d |  |  |  |
| 308 | 1.2.11.1.1 | TW-012.01 - Controle de Acesso - Tela de Login | 1d | 2022-04-07 09:00 | 2022-04-07 18:00 | 53d | start no earlier than 2022-04-07 08:00 |  |  |
| 309 | 1.2.11.1.2 | RN-015.01 - Autenticação de Usuário (2 fatores ???) | 1d | 2022-04-07 09:00 | 2022-04-07 18:00 | 53d | start no earlier than 2022-04-07 08:00 |  |  |
| 310 | 1.2.11.1.3 | Testes Unitários | 1d | 2022-04-07 09:00 | 2022-04-07 18:00 | 53d | start no earlier than 2022-04-07 08:00 |  |  |
| 311 | 1.2.11.2 | **E-048 - Manutenção de Tabela de Vendedores** | 2d | 2022-04-07 09:00 | 2022-04-08 18:00 | 52d |  |  |  |
| 312 | 1.2.11.2.1 | TW-013.01 - Vendedores - Tela de Manutenção | 2d | 2022-04-07 09:00 | 2022-04-08 18:00 | 52d | start no earlier than 2022-04-07 08:00 |  |  |
| 313 | 1.2.11.2.2 | RN-016.01 - Vendedores - CRUD - Frente de Loja | 1d | 2022-04-07 09:00 | 2022-04-07 18:00 | 53d | start no earlier than 2022-04-07 08:00 |  |  |
| 314 | 1.2.11.2.3 | RN-017.01 - Vendedores - Associação Vendedor x Loja | 0.5d | 2022-04-07 09:00 | 2022-04-07 13:00 | 53.5d | start no earlier than 2022-04-07 08:00 |  |  |
| 315 | 1.2.11.2.4 | RN-017.02 - Vendedores - Alterar Associação Vendedor x Loja | 0.5d | 2022-04-08 09:00 | 2022-04-08 13:00 | 52.5d | start no earlier than 2022-04-08 08:00 |  |  |
| 316 | 1.2.11.2.5 | RN-017.03 - Vendedores - Excluir Associação Vendedor x Loja | 0.5d | 2022-04-08 09:00 | 2022-04-08 13:00 | 52.5d | start no earlier than 2022-04-08 08:00 |  |  |
| 317 | 1.2.11.2.6 | CW-012.01 - Vendedores - Consultar Loja | 0.5d | 2022-04-08 09:00 | 2022-04-08 13:00 | 52.5d | start no earlier than 2022-04-08 08:00 |  |  |
| 318 | 1.2.11.2.7 | RN-018.01 - Auditoria do Registro | 0.5d | 2022-04-08 09:00 | 2022-04-08 13:00 | 52.5d | start no earlier than 2022-04-08 08:00 |  |  |
| 319 | 1.2.11.2.8 | Testes Unitários | 1d | 2022-04-08 09:00 | 2022-04-08 18:00 | 52d | start no earlier than 2022-04-08 08:00 |  |  |

| ID | WBS | Task | Duration | Start | Finish | Total slack | Constraint |
| --- | --- | --- | --- | --- | --- | --- | --- |
| 320 | 1.2.11.3 | **E-049 - Manutenção de Tabela de Lojas** | 2d | 2022-04-11 09:00 | 2022-04-12 18:00 | 50d |  |
| 321 | 1.2.11.3.1 | TW-014.01 - Lojas - Tela de Manutenção | 2d | 2022-04-11 09:00 | 2022-04-12 18:00 | 50d | start no earlier than 2022-04-11 08:00 |
| 322 | 1.2.11.3.2 | RN-019.01 - Lojas - CRUD | 1d | 2022-04-11 09:00 | 2022-04-11 18:00 | 51d | start no earlier than 2022-04-11 08:00 |
| 323 | 1.2.11.3.3 | RN-020.01 - Auditoria do Registro | 0.5d | 2022-04-11 09:00 | 2022-04-11 13:00 | 51.5d | start no earlier than 2022-04-11 08:00 |
| 324 | 1.2.11.3.4 | Testes Unitários | 0.5d | 2022-04-11 09:00 | 2022-04-11 13:00 | 51.5d | start no earlier than 2022-04-11 08:00 |
| 325 | 1.2.11.4 | **E-050 - Manutenção de Tabela de Formas de Pagamentos** | 2d | 2022-04-12 09:00 | 2022-04-13 18:00 | 49d |  |
| 326 | 1.2.11.4.1 | TW-015.01 - Formas de Pagamentos - Tela de Manutenção | 2d | 2022-04-12 09:00 | 2022-04-13 18:00 | 49d | start no earlier than 2022-04-12 08:00 |
| 327 | 1.2.11.4.2 | RN-021.01 - Formas de Pagamentos - CRUD - Frente de Loja | 1d | 2022-04-12 09:00 | 2022-04-12 18:00 | 50d | start no earlier than 2022-04-12 08:00 |
| 328 | 1.2.11.4.3 | RN-022.01 - Formas de Pagamentos - Associação Forma Pagamento x Loja | 0.5d | 2022-04-12 09:00 | 2022-04-12 13:00 | 50.5d | start no earlier than 2022-04-12 08:00 |
| 329 | 1.2.11.4.4 | RN-022.02 - Formas de Pagamentos - Alterar Associação Forma Pagamento x Loja | 0.5d | 2022-04-12 09:00 | 2022-04-12 13:00 | 50.5d | start no earlier than 2022-04-12 08:00 |
| 330 | 1.2.11.4.5 | RN-022.03 - Formas de Pagamentos - Excluir Associação Forma Pagamento x Loja | 0.5d | 2022-04-12 09:00 | 2022-04-12 13:00 | 50.5d | start no earlier than 2022-04-12 08:00 |
| 331 | 1.2.11.4.6 | CW-012.01 - Formas de Pagamentos - Consultar Lojas | 0.5d | 2022-04-13 09:00 | 2022-04-13 13:00 | 49.5d | start no earlier than 2022-04-13 08:00 |
| 332 | 1.2.11.4.7 | RN-023.01 - Auditoria do Registro | 0.5d | 2022-04-13 09:00 | 2022-04-13 13:00 | 49.5d | start no earlier than 2022-04-13 08:00 |
| 333 | 1.2.11.4.8 | Testes Unitários | 1d | 2022-04-13 09:00 | 2022-04-13 18:00 | 49d | start no earlier than 2022-04-13 08:00 |
| 334 | 1.2.11.5 | **E-051 - Manutenção de Tabela de Condições de Pagamentos** | 2d | 2022-04-18 09:00 | 2022-04-19 18:00 | 45d |  |
| 335 | 1.2.11.5.1 | TW-016.01 - Condições de Pagamentos - Tela de Manutenção | 2d | 2022-04-18 09:00 | 2022-04-19 18:00 | 45d | start no earlier than 2022-04-18 08:00 |
| 336 | 1.2.11.5.2 | RN-024.01 - Condições de Pagamentos - CRUD - Frente de Loja | 1d | 2022-04-18 09:00 | 2022-04-18 18:00 | 46d | start no earlier than 2022-04-18 08:00 |
| 337 | 1.2.11.5.3 | CW-012.01 - Condições de Pagamentos - Consultar Lojas | 0.5d | 2022-04-18 09:00 | 2022-04-18 13:00 | 46.5d | start no earlier than 2022-04-18 08:00 |
| 338 | 1.2.11.5.4 | RN-025.01 - Auditoria do Registro | 0.5d | 2022-04-19 09:00 | 2022-04-19 13:00 | 45.5d | start no earlier than 2022-04-19 08:00 |
| 339 | 1.2.11.5.5 | Testes Unitários | 1d | 2022-04-19 09:00 | 2022-04-19 18:00 | 45d | start no earlier than 2022-04-19 08:00 |
| 340 | 1.2.11.6 | **E-052 - Manutenção de Tabela de Triagem de Fotos dos Produtos** | 2d | 2022-04-19 09:00 | 2022-04-20 18:00 | 44d |  |
| 341 | 1.2.11.6.1 | TW-017.01 - Produto - Triagem de Fotos - Tela de Manutenção | 2d | 2022-04-19 09:00 | 2022-04-20 18:00 | 44d | start no earlier than 2022-04-19 08:00 |
| 342 | 1.2.11.6.2 | CW-013.01 - Produto - Triagem de Fotos - Consultar Produto | 0.5d | 2022-04-19 09:00 | 2022-04-19 13:00 | 45.5d | start no earlier than 2022-04-19 08:00 |
| 343 | 1.2.11.6.3 | RN-026.01 - Produto - Triagem de Fotos - Alterar informação Foto Tirada | 0.5d | 2022-04-19 09:00 | 2022-04-19 13:00 | 45.5d | start no earlier than 2022-04-19 08:00 |
| 344 | 1.2.11.6.4 | RN-027.01 - Auditoria do Registro | 0.5d | 2022-04-19 09:00 | 2022-04-19 13:00 | 45.5d | start no earlier than 2022-04-19 08:00 |
| 345 | 1.2.11.6.5 | Testes Unitários | 1d | 2022-04-19 09:00 | 2022-04-19 18:00 | 45d | start no earlier than 2022-04-19 08:00 |

| ID | WBS | Task | Duration | Start | Finish | Total slack | Constraint |
| --- | --- | --- | --- | --- | --- | --- | --- |
| 346 | 1.2.11.7 | **E-053 - Consulta de Clientes** | 1d | 2022-04-20 09:00 | 2022-04-20 18:00 | 44d |  |
| 347 | 1.2.11.7.1 | TW-018.01 - Clientes - Tela de Consulta de Clientes | 1d | 2022-04-20 09:00 | 2022-04-20 18:00 | 44d | start no earlier than 2022-04-20 08:00 |
| 348 | 1.2.11.7.2 | CW-014.01 - Clientes - Consultar Prazos do Cliente | 0.5d | 2022-04-20 09:00 | 2022-04-20 13:00 | 44.5d | start no earlier than 2022-04-20 08:00 |
| 349 | 1.2.11.7.3 | CW-012.01 - Clientes - Consutar Lojas | 0.5d | 2022-04-20 09:00 | 2022-04-20 13:00 | 44.5d | start no earlier than 2022-04-20 08:00 |
| 350 | 1.2.11.7.4 | Testes Unitários | 1d | 2022-04-20 09:00 | 2022-04-20 18:00 | 44d | start no earlier than 2022-04-20 08:00 |
| 351 | 1.2.11.8 | **E-054 - Consulta de Produtos** | 2d | 2022-04-25 09:00 | 2022-04-26 18:00 | 40d |  |
| 352 | 1.2.11.8.1 | TW-019.01 - Produtos - Tele de Consulta de Produtos | 2d | 2022-04-25 09:00 | 2022-04-26 18:00 | 40d | start no earlier than 2022-04-25 08:00 |
| 353 | 1.2.11.8.2 | CW-012.01 - Produtos - Consultar Lojas | 0.5d | 2022-04-25 09:00 | 2022-04-25 13:00 | 41.5d | start no earlier than 2022-04-25 08:00 |
| 354 | 1.2.11.8.3 | CW-015.01 - Produtos - Consultar Reserva x Loja | 0.5d | 2022-04-25 09:00 | 2022-04-25 13:00 | 41.5d | start no earlier than 2022-04-25 08:00 |
| 355 | 1.2.11.8.4 | CW-016.01 - Produtos - Consultar Estoque x Loja | 0.5d | 2022-04-25 09:00 | 2022-04-25 13:00 | 41.5d | start no earlier than 2022-04-25 08:00 |
| 356 | 1.2.11.8.5 | CW-017.01 - Produtos - Consultar Preço x Loja | 0.5d | 2022-04-25 09:00 | 2022-04-25 13:00 | 41.5d | start no earlier than 2022-04-25 08:00 |
| 357 | 1.2.11.8.6 | CW-018.01 - Produtos - Consultar Semelhantes x Loja | 0.5d | 2022-04-26 09:00 | 2022-04-26 13:00 | 40.5d | start no earlier than 2022-04-26 08:00 |
| 358 | 1.2.11.8.7 | CW-019.01 - Produtos - Consultar Insumos x Loja | 0.5d | 2022-04-26 09:00 | 2022-04-26 13:00 | 40.5d | start no earlier than 2022-04-26 08:00 |
| 359 | 1.2.11.8.8 | Testes Unitários | 1d | 2022-04-26 09:00 | 2022-04-26 18:00 | 40d | start no earlier than 2022-04-26 08:00 |
| 360 | 1.2.11.9 | **E-055 - Consulta de Fornecedores** | 1d | 2022-04-27 09:00 | 2022-04-27 18:00 | 39d |  |
| 361 | 1.2.11.9.1 | TW-020.01 - Fornecedores - Tela de Consulta de Fornecedores | 1d | 2022-04-27 09:00 | 2022-04-27 18:00 | 39d | start no earlier than 2022-04-27 08:00 |
| 362 | 1.2.11.9.2 | Testes Unitários | 1d | 2022-04-27 09:00 | 2022-04-27 18:00 | 39d | start no earlier than 2022-04-27 08:00 |
| 363 | 1.2.11.10 | **E-056 - Consulta de Pedidos de Vendas** | 1d | 2022-04-28 09:00 | 2022-04-28 18:00 | 38d |  |
| 364 | 1.2.11.10.1 | TW-021.01 - Pedidos de Vendas - Tela de Consulta Pedido de Venda | 1d | 2022-04-28 09:00 | 2022-04-28 18:00 | 38d | start no earlier than 2022-04-28 08:00 |
| 365 | 1.2.11.10.2 | Testes Unitários | 1d | 2022-04-28 09:00 | 2022-04-28 18:00 | 38d | start no earlier than 2022-04-28 08:00 |
| 366 | 1.2.11.11 | **E-057 - Consulta de Preços** | 1d | 2022-04-28 09:00 | 2022-04-28 18:00 | 38d |  |
| 367 | 1.2.11.11.1 | TW-022.01 - Lojas x Preços - Tela de Consulta Preços | 1d | 2022-04-28 09:00 | 2022-04-28 18:00 | 38d | start no earlier than 2022-04-28 08:00 |
| 368 | 1.2.11.11.2 | Testes Unitários | 1d | 2022-04-28 09:00 | 2022-04-28 18:00 | 38d | start no earlier than 2022-04-28 08:00 |
| 369 | 1.2.11.12 | **E-058 - Manutenção de Parâmetros da Loja** | 2d | 2022-04-29 09:00 | 2022-05-02 18:00 | 36d |  |
| 370 | 1.2.11.12.1 | TW-023.01 - Parâmetro da Loja - Tela de Manutenção | 2d | 2022-04-29 09:00 | 2022-05-02 18:00 | 36d | start no earlier than 2022-04-29 08:00 |
| 371 | 1.2.11.12.2 | RN-028.01 - Parâmetro da Loja - CRUD - Frente de Loja | 1d | 2022-04-29 09:00 | 2022-04-29 18:00 | 37d | start no earlier than 2022-04-29 08:00 |
| 372 | 1.2.11.12.3 | CW-012.01 - Parâmetro da Loja - Consultar Lojas | 0.5d | 2022-04-29 09:00 | 2022-04-29 13:00 | 37.5d | start no earlier than 2022-04-29 08:00 |
| 373 | 1.2.11.12.4 | RN-029.01 - Auditoria do Registro | 0.5d | 2022-04-29 09:00 | 2022-04-29 13:00 | 37.5d | start no earlier than 2022-04-29 08:00 |
| 374 | 1.2.11.12.5 | Testes Unitários | 1d | 2022-04-29 09:00 | 2022-04-29 18:00 | 37d | start no earlier than 2022-04-29 08:00 |

| ID | WBS | Task | Duration | Start | Finish | Complete | Remaining | Actual start | Actual finish | Total slack | Constraint | Resources | Work | Actual work |
| --- | --- | --- | --- | --- | --- | --- | --- | --- | --- | --- | --- | --- | --- | --- |
| 375 | 1.2.12 | **Desenvolvimento - Aprovação Varejo/Atacado** | 20d | 2021-11-15 09:00 A | 2021-12-10 18:00 | 40% | 12d |  |  | 137d |  | XSEED; SECREL | 320h | 68.83h |
| 376 | 1.2.12.1 | **E-059 - Consulta de Pedido / Loja / Cliente/ Cliente / Pagamento** | 0.5d | 2021-11-16 08:00 | 2021-11-16 12:00 | 100% |  | 2021-11-15 09:00 | 2021-11-15 13:00 |  |  |  |  |  |
| 377 | 1.2.12.1.1 | RN-030.01 - Consultar Pedido de Venda | 0.5d | 2021-11-15 09:00 A | 2021-11-15 13:00 A | 100% |  |  |  |  | start no earlier than 2021-11-15 08:00 |  |  |  |
| 378 | 1.2.12.1.2 | RN-031.01 - Consultar Loja | 0.5d | 2021-11-15 09:00 A | 2021-11-15 13:00 A | 100% |  |  |  |  | start no earlier than 2021-11-15 08:00 |  |  |  |
| 379 | 1.2.12.1.3 | RN-032.01 - Consultar Cliente | 0.5d | 2021-11-15 09:00 A | 2021-11-15 13:00 A | 100% |  |  |  |  | start no earlier than 2021-11-15 08:00 |  |  |  |
| 380 | 1.2.12.1.4 | RN-033.01 - Consultar Dados Financeiros do Cliente | 0.5d | 2021-11-15 09:00 A | 2021-11-15 13:00 A | 100% |  |  |  |  | start no earlier than 2021-11-15 08:00 |  |  |  |
| 381 | 1.2.12.1.5 | RN-034.01 - Consultar Forma de Pagamento | 0.5d | 2021-11-15 09:00 A | 2021-11-15 13:00 A | 100% |  |  |  |  | start no earlier than 2021-11-15 08:00 |  |  |  |
| 382 | 1.2.12.1.6 | RN-035.01 - Consultar Prazos | 0.5d | 2021-11-15 09:00 A | 2021-11-15 13:00 A | 100% |  |  |  |  | start no earlier than 2021-11-15 08:00 |  |  |  |
| 383 | 1.2.12.1.7 | Testes Unitários | 0.5d | 2021-11-15 09:00 A | 2021-11-15 13:00 A | 100% |  |  |  |  | start no earlier than 2021-11-15 08:00 |  |  |  |
| 384 | 1.2.12.2 | **E-060 - Regras de Aprovação** | 7d | 2021-11-16 08:00 | 2021-11-24 17:00 | 54% | 3.22d | 2021-11-15 09:00 |  |  |  |  |  |  |
| 385 | 1.2.12.2.1 | TW-024.01 - Tela Parametros de Regra de Aprovação | 2d | 2021-11-15 09:00 A | 2021-11-16 18:00 | 20% | 1.6d |  |  | 155d | start no earlier than 2021-11-15 08:00 |  |  |  |
| 386 | 1.2.12.2.2 | RN-036.01 - Tela Parametros de Regra de Aprovação - CRUD | 1d | 2021-11-15 09:00 A | 2021-11-15 18:00 | 20% | 0.8d |  |  | 156d | start no earlier than 2021-11-15 08:00 |  |  |  |
| 387 | 1.2.12.2.3 | RN-037.01 - Tela Parametros de Regra de Aprovação - Auditoria de Registro | 0.5d | 2021-11-15 09:00 A | 2021-11-15 13:00 | 20% | 0.4d |  |  | 156.5d | start no earlier than 2021-11-15 08:00 |  |  |  |
| 388 | 1.2.12.2.4 | Tela Parametros de Regra de Aprovação - Testes Unitários | 1d | 2021-11-15 09:00 | 2021-11-15 18:00 |  |  |  |  | 156d | start no earlier than 2021-11-15 08:00 |  |  |  |
| 389 | 1.2.12.2.5 | BD-010.01 - Regras de Aprovação - Definição de Tabelas | 2d | 2021-11-16 09:00 A | 2021-11-17 18:00 A | 100% |  |  |  |  | start no earlier than 2021-11-16 08:00 |  |  |  |
| 390 | 1.2.12.2.6 | RN-041.01 - Regras de Aprovação - Rentabilidade do Item | 1d | 2021-11-16 09:00 A | 2021-11-16 18:00 | 20% | 0.8d |  |  | 155d | start no earlier than 2021-11-16 08:00 |  |  |  |
| 391 | 1.2.12.2.7 | RN-040.01 - Regras de Aprovação - Cliente com Títulos ou Cheque em Atraso | 1d | 2021-11-17 09:00 A | 2021-11-17 18:00 A | 100% |  |  |  |  | start no earlier than 2021-11-17 08:00 |  |  |  |
| 392 | 1.2.12.2.8 | RN-039.01 - Regras de Aprovação - Cliente com limite de crédito ultrapassado | 1d | 2021-11-17 09:00 A | 2021-11-17 18:00 A | 100% |  |  |  |  | start no earlier than 2021-11-17 08:00 |  |  |  |
| 393 | 1.2.12.2.9 | Regras de Aprovação - Restringir prazos superiores a 30/60/90 dias no primeiro ano de cadastro | 1d | 2021-11-17 09:00 | 2021-11-17 18:00 |  |  |  |  | 154d | start no earlier than 2021-11-17 08:00 |  |  |  |
| 394 | 1.2.12.2.10 | RN-038.01 - Regras de Aprovação - Cliente Inativo - Mais de 60 dias sem comprar | 1d | 2021-11-17 09:00 A | 2021-11-17 18:00 A | 100% |  |  |  |  | start no earlier than 2021-11-17 08:00 |  |  |  |
| 395 | 1.2.12.2.11 | INS-003.01 - Regras de Aprovação - Integração - Análise de Rentabilidade do Item | 1d | 2021-11-18 09:00 A | 2021-11-18 18:00 | 20% | 0.8d |  |  | 153d | start no earlier than 2021-11-18 08:00 |  |  |  |
| 396 | 1.2.12.2.12 | Regras de Aprovação - Testes Unitários | 4d | 2021-11-18 09:00 A | 2021-11-23 18:00 | 70% | 1.2d |  |  | 150d | start no earlier than 2021-11-18 08:00 |  |  |  |
| 397 | 1.2.12.3 | **E-061 - Política de Descontos Por Produto / Política de Descontos Por Cliente** | 5d | 2021-11-23 09:00 | 2021-11-29 18:00 |  |  |  |  | 146d |  |  |  |  |
| 398 | 1.2.12.3.1 | TW-025.01 - Tela Política de Desconto do Produto | 4d | 2021-11-23 09:00 | 2021-11-26 18:00 |  |  |  |  | 147d | start no earlier than 2021-11-23 08:00 |  |  |  |
| 399 | 1.2.12.3.2 | RN-041.01 - Tela Política de Descontos do Produto - CRUD | 1d | 2021-11-23 09:00 | 2021-11-23 18:00 |  |  |  |  | 150d | start no earlier than 2021-11-23 08:00 |  |  |  |
| 400 | 1.2.12.3.3 | RN-042.01 - Tela Política de Descontos do Produto - Auditoria de Registro | 0.5d | 2021-11-23 09:00 | 2021-11-23 13:00 |  |  |  |  | 150.5d | start no earlier than 2021-11-23 08:00 |  |  |  |
| 401 | 1.2.12.3.4 | Tela Política de Descontos do Produto - Testes Unitário | 1d | 2021-11-23 09:00 | 2021-11-23 18:00 |  |  |  |  | 150d | start no earlier than 2021-11-23 08:00 |  |  |  |
| 402 | 1.2.12.3.5 | TW-026.01 - Tela Política de Desconto do Cliente | 4d | 2021-11-24 09:00 | 2021-11-29 18:00 |  |  |  |  | 146d | start no earlier than 2021-11-24 08:00 |  |  |  |
| 403 | 1.2.12.3.6 | RN-043.01 - Tela Política de Desconto do Cliente - CRUD | 1d | 2021-11-24 09:00 | 2021-11-24 18:00 |  |  |  |  | 149d | start no earlier than 2021-11-24 08:00 |  |  |  |
| 404 | 1.2.12.3.7 | RN-044.01 - Tela Política de Desconto do Cliente - Auditoria de Registro | 0.5d | 2021-11-24 09:00 | 2021-11-24 13:00 |  |  |  |  | 149.5d | start no earlier than 2021-11-24 08:00 |  |  |  |
| 405 | 1.2.12.3.8 | Tela Política de Desconto do Cliente - Testes Unitários | 1d | 2021-11-24 09:00 | 2021-11-24 18:00 |  |  |  |  | 149d | start no earlier than 2021-11-24 08:00 |  |  |  |

| ID | WBS | Task | Type | Duration | Start | Finish | Complete | Remaining | Total slack | Constraint | Resources | Work | Actual work |
| --- | --- | --- | --- | --- | --- | --- | --- | --- | --- | --- | --- | --- | --- |
| 406 | 1.2.12.4 | **E-062 - Acompanhamento de Aprovação** |  | 12d | 2021-11-25 09:00 A | 2021-12-10 18:00 | 44% | 6.72d | 137d |  |  |  |  |
| 407 | 1.2.12.4.1 | TW-027.01 - Tela de Acompanhamento de Aprovação - Varejo |  | 2d | 2021-11-25 09:00 | 2021-11-26 18:00 |  |  | 147d | start no earlier than 2021-11-25 08:00 |  |  |  |
| 408 | 1.2.12.4.2 | TW-028.01 - Tela de Acompanhamento de Aprovação - Atacado |  | 2d | 2021-11-25 09:00 A | 2021-11-26 18:00 A | 100% |  |  | start no earlier than 2021-11-25 08:00 |  |  |  |
| 409 | 1.2.12.4.3 | TW-029.01 - Tela de Aprovação - Setor de Aprovação |  | 8d | 2021-11-25 09:00 | 2021-12-06 18:00 |  |  | 141d | start no earlier than 2021-11-25 08:00 |  |  |  |
| 410 | 1.2.12.4.4 | RN-045.01 - Auditoria de Registro |  | 1d | 2021-11-25 09:00 A | 2021-11-25 18:00 A | 100% |  |  | start no earlier than 2021-11-25 08:00 |  |  |  |
| 411 | 1.2.12.4.5 | JOB de captura dos pedidos pendentes para aprovação |  | 3d | 2021-12-08 09:00 A | 2021-12-10 18:00 A | 100% |  |  | start no earlier than 2021-12-08 08:00 |  |  |  |
| 412 | 1.2.12.4.6 | Testes Unitários |  | 4d | 2021-12-01 09:00 A | 2021-12-06 18:00 | 70% | 1.2d | 141d | start no earlier than 2021-12-01 08:00 |  |  |  |
| 413 | 1.2.13 | **Desenvolvimento Integração** |  | 8d | 2022-05-02 08:00 A | 2022-05-11 18:00 | 14% | 6.9d | 29d |  | XSEED; SECREL | 128h | 17.6h |
| 414 | 1.2.13.1 | **E-063 - Integração SAP** |  | 5d | 2022-05-02 08:00 A | 2022-05-06 18:00 | 22% | 3.9d | 32d |  |  |  |  |
| 415 | 1.2.13.1.1 | INS-001.01 - Envio Pedido de Venda Varejo - SAP |  | 2d | 2022-05-02 09:00 | 2022-05-03 18:00 |  |  | 35d | start no earlier than 2022-05-02 08:00 |  |  |  |
| 416 | 1.2.13.1.2 | INS-002.01 - Envio Ficha Financeira Cliente - SAP |  | 2d | 2022-05-02 09:00 A | 2022-05-03 18:00 A | 100% |  |  | start no earlier than 2022-05-02 08:00 |  |  |  |
| 417 | 1.2.13.1.3 | Solicitação de Consulta de Cliente - SAP | milestone | 0d | 2022-05-02 08:00 | 2022-05-02 08:00 |  |  | 37d | start no earlier than 2022-05-02 08:00 |  |  |  |
| 418 | 1.2.13.1.4 | Geração Pedido de Venda - SAP | milestone | 0d | 2022-05-02 08:00 | 2022-05-02 08:00 |  |  | 37d | start no earlier than 2022-05-02 08:00 |  |  |  |
| 419 | 1.2.13.1.5 | Geração Devolução - SAP | milestone | 0d | 2022-05-02 08:00 A | 2022-05-02 08:00 | 90% | 0d | 37d | start no earlier than 2022-05-02 08:00 |  |  |  |
| 420 | 1.2.13.1.6 | Geração Transferência - SAP | milestone | 0d | 2022-05-02 08:00 | 2022-05-02 08:00 |  |  | 37d | start no earlier than 2022-05-02 08:00 |  |  |  |
| 421 | 1.2.13.1.7 | Solicitação de Consulta Status Pedido de Venda - SAP | milestone | 0d | 2022-05-02 08:00 | 2022-05-02 08:00 |  |  | 37d | start no earlier than 2022-05-02 08:00 |  |  |  |
| 422 | 1.2.13.1.8 | Cadastro Rápido de Cliente - SAP | milestone | 0d | 2022-05-02 08:00 | 2022-05-02 08:00 |  |  | 37d | start no earlier than 2022-05-02 08:00 |  |  |  |
| 423 | 1.2.13.1.9 | RN-046.01 - Auditoria - Serviços |  | 4d | 2022-05-03 09:00 | 2022-05-06 18:00 |  |  | 32d | start no earlier than 2022-05-03 08:00 |  |  |  |
| 424 | 1.2.13.1.10 | Testes Unitários |  | 2d | 2022-05-04 09:00 A | 2022-05-05 18:00 | 10% | 1.8d | 33d | start no earlier than 2022-05-04 08:00 |  |  |  |
| 425 | 1.2.13.2 | **E-064 - Integração Frente de Loja** |  | 5d | 2022-05-05 08:00 | 2022-05-11 18:00 |  |  | 29d |  |  |  |  |
| 426 | 1.2.13.2.1 | Receber Desconto de Cliente - Frente de Loja | milestone | 0d | 2022-05-05 08:00 | 2022-05-05 08:00 |  |  | 34d | start no earlier than 2022-05-05 08:00 |  |  |  |
| 427 | 1.2.13.2.2 | Resposta Consulta Pedido - Frente de Loja | milestone | 0d | 2022-05-05 08:00 | 2022-05-05 08:00 |  |  | 34d | start no earlier than 2022-05-05 08:00 |  |  |  |
| 428 | 1.2.13.2.3 | Receber Produto - Frente de Loja | milestone | 0d | 2022-05-05 08:00 | 2022-05-05 08:00 |  |  | 34d | start no earlier than 2022-05-05 08:00 |  |  |  |
| 429 | 1.2.13.2.4 | Receber Preços dos Produtos - Frente de Loja | milestone | 0d | 2022-05-05 08:00 | 2022-05-05 08:00 |  |  | 34d | start no earlier than 2022-05-05 08:00 |  |  |  |
| 430 | 1.2.13.2.5 | Receber Cadastro de Cliente - Frente de Loja | milestone | 0d | 2022-05-05 08:00 | 2022-05-05 08:00 |  |  | 34d | start no earlier than 2022-05-05 08:00 |  |  |  |
| 431 | 1.2.13.2.6 | Receber Aprovação do Pedido de Venda - Frente de Loja | milestone | 0d | 2022-05-05 08:00 | 2022-05-05 08:00 |  |  | 34d | start no earlier than 2022-05-05 08:00 |  |  |  |
| 432 | 1.2.13.2.7 | Receber Status do Pedido de Venda - Frente de Loja | milestone | 0d | 2022-05-05 08:00 | 2022-05-05 08:00 |  |  | 34d | start no earlier than 2022-05-05 08:00 |  |  |  |
| 433 | 1.2.13.2.8 | RN-047.01 - Auditoria - Serviços |  | 4d | 2022-05-05 09:00 | 2022-05-10 18:00 |  |  | 30d | start no earlier than 2022-05-05 08:00 |  |  |  |
| 434 | 1.2.13.2.9 | Testes Unitários |  | 2d | 2022-05-10 09:00 | 2022-05-11 18:00 |  |  | 29d | start no earlier than 2022-05-10 08:00 |  |  |  |

| ID | WBS | Task | Duration | Start | Finish | Complete | Remaining | Total slack | Constraint | Resources | Work | Actual work |
| --- | --- | --- | --- | --- | --- | --- | --- | --- | --- | --- | --- | --- |
| 435 | 1.2.14 | **Desenvolvimento - Módulo de Gestão de Acessos** | 13d | 2022-01-10 08:00 A | 2022-01-26 18:00 | 63% | 4.88d | 104d |  | XSEED; SECREL | 208h | 48h |
| 436 | 1.2.14.1 | **E-065 - Módulo de Gestão de Acessos** | 13d | 2022-01-10 08:00 A | 2022-01-26 18:00 | 63% | 4.88d | 104d |  |  |  |  |
| 437 | 1.2.14.1.1 | TW-030.01 - Tela de Manutenção de Usuários | 5d | 2022-01-10 08:00 A | 2022-01-14 18:00 | 80% | 1d | 0d | must start on 2022-01-10 08:00 |  |  |  |
| 438 | 1.2.14.1.2 | CW-020.01 - Tela de manutenção de Perfil de Usuários | 3d | 2022-01-16 08:00 A | 2022-01-19 18:00 A | 100% |  |  | start no earlier than 2022-01-16 08:00 |  |  |  |
| 439 | 1.2.14.1.3 | CW-021.01 - Tela de Manutenção de Transações por Perfil | 3d | 2022-01-20 08:00 A | 2022-01-24 18:00 | 23% | 2.3d | 106d | start no earlier than 2022-01-20 08:00 |  |  |  |
| 440 | 1.2.14.1.4 | CW-022.01 - Tela de Manutenção de Transações | 3d | 2022-01-24 08:00 A | 2022-01-26 18:00 | 23% | 2.3d | 104d | start no earlier than 2022-01-24 08:00 |  |  |  |
| 441 | 1.2.14.1.5 | Testes Unitários | 2d | 2022-01-24 08:00 A | 2022-01-25 18:00 | 80% | 0.4d | 105d | start no earlier than 2022-01-24 08:00 |  |  |  |
| 442 | 1.2.15 | **Desenvolvimento - Consulta Pedidos** | 6d | 2022-05-16 09:00 | 2022-05-23 18:00 |  |  | 19d |  | XSEED; SECREL | 96h |  |
| 443 | 1.2.15.1 | **E-066 - Filtro de Pesquisa de Pedidos** | 3d | 2022-05-16 09:00 | 2022-05-18 18:00 |  |  | 22d |  |  |  |  |
| 444 | 1.2.15.1.1 | TW-031.01 - Tela de Consulta de Pedidos | 2d | 2022-05-16 09:00 | 2022-05-17 18:00 |  |  | 23d | start no earlier than 2022-05-16 08:00 |  |  |  |
| 445 | 1.2.15.1.2 | RN-049.01 - Filtro para pesquisar os pedidos | 1d | 2022-05-16 09:00 | 2022-05-16 18:00 |  |  | 24d | start no earlier than 2022-05-16 08:00 |  |  |  |
| 446 | 1.2.15.1.3 | CW-012.01 - Consultar Lojas | 0.5d | 2022-05-16 09:00 | 2022-05-16 13:00 |  |  | 24.5d | start no earlier than 2022-05-16 08:00 |  |  |  |
| 447 | 1.2.15.1.4 | TW-010.01 - Consultar Clientes | 0.5d | 2022-05-16 09:00 | 2022-05-16 13:00 |  |  | 24.5d | start no earlier than 2022-05-16 08:00 |  |  |  |
| 448 | 1.2.15.1.5 | TW-011.01 - Consultar Vendedores | 0.5d | 2022-05-17 09:00 | 2022-05-17 13:00 |  |  | 23.5d | start no earlier than 2022-05-17 08:00 |  |  |  |
| 449 | 1.2.15.1.6 | TW-016.01 - Consultar Transportadoras | 0.5d | 2022-05-17 09:00 | 2022-05-17 13:00 |  |  | 23.5d | start no earlier than 2022-05-17 08:00 |  |  |  |
| 450 | 1.2.15.1.7 | Testes Unitários | 2d | 2022-05-17 09:00 | 2022-05-18 18:00 |  |  | 22d | start no earlier than 2022-05-17 08:00 |  |  |  |
| 451 | 1.2.15.2 | **E-067 - Ações no Pedido** | 3d | 2022-05-19 09:00 | 2022-05-23 18:00 |  |  | 19d |  |  |  |  |
| 452 | 1.2.15.2.1 | RN-050.01 - Abrir Pedido | 0.5d | 2022-05-19 09:00 | 2022-05-19 13:00 |  |  | 21.5d | start no earlier than 2022-05-19 08:00 |  |  |  |
| 453 | 1.2.15.2.2 | RN-051.01 - Exibir Pedido | 0.5d | 2022-05-19 09:00 | 2022-05-19 13:00 |  |  | 21.5d | start no earlier than 2022-05-19 08:00 |  |  |  |
| 454 | 1.2.15.2.3 | RN-052.01 - Cancelar Pedido | 0.5d | 2022-05-19 09:00 | 2022-05-19 13:00 |  |  | 21.5d | start no earlier than 2022-05-19 08:00 |  |  |  |
| 455 | 1.2.15.2.4 | RN-053.01 - Visualizar Histórico do Pedido | 1d | 2022-05-19 09:00 | 2022-05-19 18:00 |  |  | 21d | start no earlier than 2022-05-19 08:00 |  |  |  |
| 456 | 1.2.15.2.5 | RN-054.01 - Imprimir Pedido | 1d | 2022-05-19 09:00 | 2022-05-19 18:00 |  |  | 21d | start no earlier than 2022-05-19 08:00 |  |  |  |
| 457 | 1.2.15.2.6 | RN-055.01 - Exportar Pedido | 0.5d | 2022-05-20 09:00 | 2022-05-20 13:00 |  |  | 20.5d | start no earlier than 2022-05-20 08:00 |  |  |  |
| 458 | 1.2.15.2.7 | RN-056.01 - Enviar Pedido por email | 1d | 2022-05-20 09:00 | 2022-05-20 18:00 |  |  | 20d | start no earlier than 2022-05-20 08:00 |  |  |  |
| 459 | 1.2.15.2.8 | RN-057.01 - Auditoria da Ação | 0.5d | 2022-05-20 09:00 | 2022-05-20 13:00 |  |  | 20.5d | start no earlier than 2022-05-20 08:00 |  |  |  |
| 460 | 1.2.15.2.9 | Testes Unitários | 2d | 2022-05-20 09:00 | 2022-05-23 18:00 |  |  | 19d | start no earlier than 2022-05-20 08:00 |  |  |  |

| ID | WBS | Task | Duration | Start | Finish | Complete | Total slack | Constraint | Resources | Work | Actual work |
| --- | --- | --- | --- | --- | --- | --- | --- | --- | --- | --- | --- |
| 461 | 1.2.16 | **Desenvolvimento Política de Frete** | 3d | 2022-05-23 09:00 | 2022-05-25 18:00 |  | 17d |  | XSEED; SECREL | 48h |  |
| 462 | 1.2.16.1 | **E-068 - Política de Frete** | 3d | 2022-05-23 09:00 | 2022-05-25 18:00 |  | 17d |  |  |  |  |
| 463 | 1.2.16.1.1 | TW-032.01 - Tela de Política de Frete | 2d | 2022-05-23 09:00 | 2022-05-24 18:00 |  | 18d | start no earlier than 2022-05-23 08:00 |  |  |  |
| 464 | 1.2.16.1.2 | RN-058.01 - Regras da Política de Frete - CRUD | 2d | 2022-05-24 09:00 | 2022-05-25 18:00 |  | 17d | start no earlier than 2022-05-24 08:00 |  |  |  |
| 465 | 1.2.16.1.3 | RN-059.01 - Auditoria do Registro | 0.5d | 2022-05-24 09:00 | 2022-05-24 13:00 |  | 18.5d | start no earlier than 2022-05-24 08:00 |  |  |  |
| 466 | 1.2.16.1.4 | Testes Unitários | 1d | 2022-05-24 09:00 | 2022-05-24 18:00 |  | 18d | start no earlier than 2022-05-24 08:00 |  |  |  |
| 467 | 1.2.17 | **Desenvolvimento - Política de Prazo/Desconto por Valor** | 4d | 2022-05-24 09:00 | 2022-05-27 18:00 |  | 15d |  | XSEED; SECREL | 64h |  |
| 468 | 1.2.17.1 | **E-069 - Política de Prazos / Descontos por Valor** | 4d | 2022-05-24 09:00 | 2022-05-27 18:00 |  | 15d |  |  |  |  |
| 469 | 1.2.17.1.1 | TW-033.01 - Tela Política de Prazos/Descontos por Valor | 4d | 2022-05-24 09:00 | 2022-05-27 18:00 |  | 15d | start no earlier than 2022-05-24 08:00 |  |  |  |
| 470 | 1.2.17.1.2 | RN-060.01 - Regras de Prazos/Descontos por Valor - CRUD | 2d | 2022-05-24 09:00 | 2022-05-25 18:00 |  | 17d | start no earlier than 2022-05-24 08:00 |  |  |  |
| 471 | 1.2.17.1.3 | RN-061.01 - Auditoria do Registro | 1d | 2022-05-25 09:00 | 2022-05-25 18:00 |  | 17d | start no earlier than 2022-05-25 08:00 |  |  |  |
| 472 | 1.2.17.1.4 | Testes Unitários | 2d | 2022-05-26 09:00 | 2022-05-27 18:00 |  | 15d | start no earlier than 2022-05-26 08:00 |  |  |  |
| 473 | 1.2.18 | **Banco de Dados** | 8d | 2021-10-11 09:00 A | 2021-10-20 18:00 A | 100% |  |  | XSEED; SECREL | 128h | 128h |
| 474 | 1.2.18.1 | **E-070 - Banco de Dados Varejo** | 5d | 2021-10-11 09:00 A | 2021-10-15 18:00 A | 100% |  |  |  |  |  |
| 475 | 1.2.18.1.1 | BD-011.01 - Criação de Chaves Estrangeira - Varejo | 2d | 2021-10-11 09:00 A | 2021-10-12 18:00 A | 100% |  | start no earlier than 2021-10-11 08:00 |  |  |  |
| 476 | 1.2.18.1.2 | BD-012.01 - Unificar bancos de dados das Loja - Varejo | 2d | 2021-10-11 09:00 A | 2021-10-12 18:00 A | 100% |  | start no earlier than 2021-10-11 08:00 |  |  |  |
| 477 | 1.2.18.1.3 | BD-013.01 - Modelo de Dados - Varejo | 2d | 2021-10-13 09:00 A | 2021-10-14 18:00 A | 100% |  | start no earlier than 2021-10-13 08:00 |  |  |  |
| 478 | 1.2.18.1.4 | Testes Unitários | 2d | 2021-10-14 09:00 A | 2021-10-15 18:00 A | 100% |  | start no earlier than 2021-10-14 08:00 |  |  |  |
| 479 | 1.2.18.2 | **E-071 - Banco de Dados Atacado** | 3d | 2021-10-18 09:00 A | 2021-10-20 18:00 A | 100% |  |  |  |  |  |
| 480 | 1.2.18.2.1 | BD-014.01 - Criação de Chaves Estrangeira - Atacado | 1d | 2021-10-18 09:00 A | 2021-10-18 18:00 A | 100% |  | start no earlier than 2021-10-18 08:00 |  |  |  |
| 481 | 1.2.18.2.2 | BD-015.01 - Unificar bancos de dados das Loja - Atacado | 1d | 2021-10-18 09:00 A | 2021-10-18 18:00 A | 100% |  | start no earlier than 2021-10-18 08:00 |  |  |  |
| 482 | 1.2.18.2.3 | BD-016.01 - Modelo de Dados - Atacado | 1d | 2021-10-19 09:00 A | 2021-10-19 18:00 A | 100% |  | start no earlier than 2021-10-19 08:00 |  |  |  |
| 483 | 1.2.18.2.4 | Testes Unitários | 1d | 2021-10-20 09:00 A | 2021-10-20 18:00 A | 100% |  | start no earlier than 2021-10-20 08:00 |  |  |  |
| 484 | 1.2.19 | **Melhorias** | 22d | 2022-04-08 09:00 | 2022-05-09 18:00 |  | 31d |  |  |  |  |
| 485 | 1.2.19.1 | **Frente de Loja - Varejo - Venda** | 9d | 2022-04-08 09:00 | 2022-04-20 18:00 |  | 44d |  |  |  |  |
| 486 | 1.2.19.1.1 | **E-009 - Politica de Descontos / Frete** | 9d | 2022-04-08 09:00 | 2022-04-20 18:00 |  | 44d |  |  |  |  |
| 487 | 1.2.19.1.1.1 | RN-005.01 - Politica de descontos - Consumidor Final | 1d | 2022-04-08 09:00 | 2022-04-08 18:00 |  | 52d | start no earlier than 2022-04-08 08:00 |  |  |  |
| 488 | 1.2.19.1.1.2 | RN-005.02 - Politica de descontos - Cliente Cadastrado | 1d | 2022-04-11 09:00 | 2022-04-11 18:00 |  | 51d | start no earlier than 2022-04-11 08:00 |  |  |  |
| 489 | 1.2.19.1.1.3 | RN-006.01 - Política de Frete - Delivery | 4d | 2022-04-13 09:00 | 2022-04-18 18:00 |  | 46d | start no earlier than 2022-04-13 08:00 |  |  |  |
| 490 | 1.2.19.1.1.4 | TW-005.01 - Tela de Autorizações | 2d | 2022-04-19 09:00 | 2022-04-20 18:00 |  | 44d | start no earlier than 2022-04-19 08:00 |  |  |  |
| 491 | 1.2.19.1.1.5 | Testes Unitários | 2d | 2022-04-19 09:00 | 2022-04-20 18:00 |  | 44d | start no earlier than 2022-04-19 08:00 |  |  |  |

| ID | WBS | Task | Duration | Start | Finish | Total slack | Constraint | Resources | Work |
| --- | --- | --- | --- | --- | --- | --- | --- | --- | --- |
| 492 | 1.2.19.2 | **Varejo - Orçamento** | 6d | 2022-05-02 09:00 | 2022-05-09 18:00 | 31d |  |  |  |
| 493 | 1.2.19.2.1 | **E-015 - Politica de Descontos / Frete** | 6d | 2022-05-02 09:00 | 2022-05-09 18:00 | 31d |  |  |  |
| 494 | 1.2.19.2.1.1 | E-015 - Politica de Descontos / Frete | 1d | 2022-05-02 09:00 | 2022-05-02 18:00 | 36d | start no earlier than 2022-05-02 08:00 |  |  |
| 495 | 1.2.19.2.1.2 | RN-005.01 - Politica de Descontos - Consumidor Final | 2d | 2022-05-02 09:00 | 2022-05-03 18:00 | 35d | start no earlier than 2022-05-02 08:00 |  |  |
| 496 | 1.2.19.2.1.3 | RN-005.02 - Politica de Descontos - Cliente Cadastrado | 2d | 2022-05-03 09:00 | 2022-05-04 18:00 | 34d | start no earlier than 2022-05-03 08:00 |  |  |
| 497 | 1.2.19.2.1.4 | RN-006.01 - Política de Frete - Delivery | 2d | 2022-05-05 09:00 | 2022-05-06 18:00 | 32d | start no earlier than 2022-05-05 08:00 |  |  |
| 498 | 1.2.19.2.1.5 | Testes Unitários | 1d | 2022-05-09 09:00 | 2022-05-09 18:00 | 31d | start no earlier than 2022-05-08 08:00 |  |  |
| 499 | 1.3 | SIT - Testes de Integração | 15d | 2022-04-04 09:00 | 2022-04-22 18:00 | 42d | start no earlier than 2022-04-04 08:00 | XSEED; SECREL; APPC | 360h |
| 500 | 1.4 | UAT - Testes de Usuário - Certificação | 27d | 2022-04-25 09:00 | 2022-05-27 18:00 | 15d | start no earlier than 2022-04-25 08:00 | XSEED; SECREL; APPC | 648h |
| 501 | 1.5 | Entrada em Produção | 15d | 2022-05-30 09:00 | 2022-06-17 18:00 | 0d | start no earlier than 2022-05-30 08:00 | XSEED; SECREL; APPC | 360h |
